| id | name | wbs | activity_type | calendar | original_duration_h | original_duration_days_display | remaining_duration_h | duration_type | percent_complete_type | status | actual_start | actual_finish | duration_percent_complete | physical_percent_complete | units_percent_complete | primary_constraint | activity_codes | test_tags | note | external_early_start | udfs | suspend_date | resume_date | secondary_constraint | expected_finish |
| --- | --- | --- | --- | --- | --- | --- | --- | --- | --- | --- | --- | --- | --- | --- | --- | --- | --- | --- | --- | --- | --- | --- | --- | --- | --- |
| A1000 | Notice to Proceed | TT.1 | START_MILESTONE | CAL-01 | 0.0 | 0.0 | 0.0 | FIXED_DURATION_AND_UNITS_TIME | DURATION | COMPLETED | 2026-01-05T08:00:00 | 2026-01-05T08:00:00 | 100 | 0.0 | 0.0 | START_ON_OR_AFTER 2026-01-05T08:00:00 | PM SITE CONST WOOD N/A | type_start_ms, con_snet, prog_complete |  |  |  |  |  |  |  |
| A1010 | Construction Management & Supervision | TT.1 | LEVEL_OF_EFFORT | CAL-01 | 0.0 | 0.0 | 0.0 | FIXED_DURATION_AND_UNITS_TIME | DURATION | IN_PROGRESS | 2026-01-05T08:00:00 |  | 18 | 0.0 | 0.0 |  | PM SITE CONST WOOD | type_loe, loe_spans_project | LOE: duration is DERIVED from its SS predecessor and FF successor. Must never drive logic and must never be critical. |  |  |  |  |  |  |
| A1020 | QA/QC Surveillance | TT.1 | LEVEL_OF_EFFORT | CAL-01 | 0.0 | 0.0 | 0.0 | FIXED_DURATION_AND_UNITS_TIME | DURATION | IN_PROGRESS | 2026-01-26T08:00:00 |  | 15 | 0.0 | 0.0 |  | PM SITE CONST WOOD | type_loe |  |  |  |  |  |  |  |
| A1030 | HSE Management & Permit Control | TT.1 | LEVEL_OF_EFFORT | CAL-02 | 0.0 | 0.0 | 0.0 | FIXED_DURATION_AND_UNITS_TIME | DURATION | IN_PROGRESS | 2026-01-05T07:00:00 |  | 16 | 0.0 | 0.0 |  | HSE SITE CONST WOOD | type_loe, loe_different_calendar_to_span_ends | LOE on CAL-02 spanning activities on CAL-01/CAL-03 - tests LOE duration derivation across calendars. |  |  |  |  |  |  |
| A1040 | Project Controls & Reporting | TT.1 | LEVEL_OF_EFFORT | CAL-01 | 0.0 | 0.0 | 0.0 | FIXED_DURATION_AND_UNITS_TIME | DURATION | IN_PROGRESS | 2026-01-05T08:00:00 |  | 18 | 0.0 | 0.0 |  | PM SITE CONST WOOD | type_loe |  |  |  |  |  |  |  |
| W4000 | CWA-100 Civils (WBS Summary) | TT.4 | WBS_SUMMARY | CAL-02 | 0.0 | 0.0 | 0.0 | FIXED_DURATION_AND_UNITS_TIME | DURATION | NOT_STARTED |  |  | 0.0 | 0.0 | 0.0 |  | CIV CWA-100 | type_wbs_summary | Dates derived from earliest start / latest finish of all activities in WBS TT.4 and below. No relationships. |  |  |  |  |  |  |
| W5000 | CWA-200 Steelwork (WBS Summary) | TT.5 | WBS_SUMMARY | CAL-02 | 0.0 | 0.0 | 0.0 | FIXED_DURATION_AND_UNITS_TIME | DURATION | NOT_STARTED |  |  | 0.0 | 0.0 | 0.0 |  | STL CWA-200 | type_wbs_summary |  |  |  |  |  |  |  |
| W7000 | CWA-400 Piping (WBS Summary) | TT.7 | WBS_SUMMARY | CAL-02 | 0.0 | 0.0 | 0.0 | FIXED_DURATION_AND_UNITS_TIME | DURATION | NOT_STARTED |  |  | 0.0 | 0.0 | 0.0 |  | PIP CWA-400 | type_wbs_summary |  |  |  |  |  |  |  |
| A2000 | Site Access Granted (Contract Milestone) | TT.2 | START_MILESTONE | CAL-01 | 0.0 | 0.0 | 0.0 | FIXED_DURATION_AND_UNITS_TIME | DURATION | COMPLETED | 2026-01-19T08:00:00 | 2026-01-19T08:00:00 | 100 | 0.0 | 0.0 | START_ON 2026-01-19T08:00:00 | PM SITE CONST WOOD | con_start_on, type_start_ms | START_ON pins BOTH early and late start. Engine must not allow the forward pass to move it later, nor the backward pass earlier. |  |  |  |  |  |  |
| A2100 | IFC Civil Drawings Received | TT.2 | FINISH_MILESTONE | CAL-01 | 0.0 | 0.0 | 0.0 | FIXED_DURATION_AND_UNITS_TIME | DURATION | COMPLETED | 2026-01-16T17:00:00 | 2026-01-16T17:00:00 | 100 | 0.0 | 0.0 |  | CIV ENG WOOD | net_open_start, type_finish_ms | OPEN START: no predecessor. DCMA 14-point check should flag this. |  |  |  |  |  |  |
| A2110 | IFC Structural Drawings Received | TT.2 | FINISH_MILESTONE | CAL-01 | 0.0 | 0.0 | 0.0 | FIXED_DURATION_AND_UNITS_TIME | DURATION | COMPLETED | 2026-01-30T17:00:00 | 2026-01-30T17:00:00 | 100 | 0.0 | 0.0 |  | STL ENG | type_finish_ms |  |  |  |  |  |  |  |
| A2120 | IFC Piping Isometrics Rev 0 | TT.2 | FINISH_MILESTONE | CAL-01 | 0.0 | 0.0 | 0.0 | FIXED_DURATION_AND_UNITS_TIME | DURATION | NOT_STARTED |  |  | 0.0 | 0.0 | 0.0 |  | PIP ENG | net_external_early_start, interproject | External early start from the Engineering project. With 'Ignore relationships to/from other projects' = TRUE this must be dropped. | 2026-04-13T08:00:00 |  |  |  |  |  |
| A2200 | Absorber Column T-301 Delivered to Site | TT.2 | FINISH_MILESTONE | CAL-03 | 0.0 | 0.0 | 0.0 | FIXED_DURATION_AND_UNITS_TIME | DURATION | NOT_STARTED |  |  | 0.0 | 0.0 | 0.0 |  | MEC PROC VENDOR | net_external_early_start, net_external_open_start |  | 2026-07-27T06:00:00 | T-301 |  |  |  |  |
| A2210 | Module PAU-301 Delivered to Site | TT.2 | FINISH_MILESTONE | CAL-03 | 0.0 | 0.0 | 0.0 | FIXED_DURATION_AND_UNITS_TIME | DURATION | NOT_STARTED |  |  | 0.0 | 0.0 | 0.0 |  | MEC PROC VENDOR | net_external_early_start, net_external_open_start |  | 2026-07-20T06:00:00 | PAU-301 |  |  |  |  |
| A2220 | Amine Pumps P-301A/B Delivered | TT.2 | FINISH_MILESTONE | CAL-01 | 0.0 | 0.0 | 0.0 | FIXED_DURATION_AND_UNITS_TIME | DURATION | NOT_STARTED |  |  | 0.0 | 0.0 | 0.0 |  | MEC PROC VENDOR | net_external_early_start, net_external_open_start |  | 2026-06-15T08:00:00 | P-301A/B |  |  |  |  |
| A2230 | HV Switchgear Delivered | TT.2 | FINISH_MILESTONE | CAL-03 | 0.0 | 0.0 | 0.0 | FIXED_DURATION_AND_UNITS_TIME | DURATION | NOT_STARTED |  |  | 0.0 | 0.0 | 0.0 |  | ELE PROC VENDOR | net_external_early_start, net_external_open_start |  | 2026-08-10T06:00:00 |  |  |  |  |  |
| A2300 | Structural Steel Batch 1 Delivered | TT.2 | TASK_DEPENDENT | CAL-01 | 40.0 | 5.0 | 0.0 | FIXED_DURATION_AND_UNITS_TIME | DURATION | COMPLETED | 2026-02-09T08:00:00 | 2026-02-13T17:00:00 | 100 | 0.0 | 0.0 |  | STL PROC VENDOR | prog_complete |  |  |  |  |  |  |  |
| A2310 | Structural Steel Batch 2 Delivered | TT.2 | TASK_DEPENDENT | CAL-01 | 40.0 | 5.0 | 40.0 | FIXED_DURATION_AND_UNITS_TIME | DURATION | NOT_STARTED |  |  | 0.0 | 0.0 | 0.0 |  | STL PROC VENDOR |  |  |  |  |  |  |  |  |
| A2320 | Pipe Spools Batch 1 Delivered | TT.2 | TASK_DEPENDENT | CAL-01 | 80.0 | 10.0 | 80.0 | FIXED_DURATION_AND_UNITS_TIME | DURATION | NOT_STARTED |  |  | 0.0 | 0.0 | 0.0 |  | PIP PROC VENDOR |  |  |  |  |  |  |  |  |
| A2330 | Pipe Spools Batch 2 Delivered | TT.2 | TASK_DEPENDENT | CAL-01 | 80.0 | 10.0 | 80.0 | FIXED_DURATION_AND_UNITS_TIME | DURATION | NOT_STARTED |  |  | 0.0 | 0.0 | 0.0 |  | PIP PROC VENDOR |  |  |  |  |  |  |  |  |
| A3000 | Mobilise to Site | TT.3 | TASK_DEPENDENT | CAL-01 | 40.0 | 5.0 | 0.0 | FIXED_DURATION_AND_UNITS_TIME | DURATION | COMPLETED | 2026-01-05T08:00:00 | 2026-01-09T17:00:00 | 100 | 0.0 | 0.0 |  | PM SITE CONST WOOD | prog_complete |  |  |  |  |  |  |  |
| A3010 | Site Establishment & Welfare | TT.3 | TASK_DEPENDENT | CAL-02 | 100.0 | 10.0 | 0.0 | FIXED_DURATION_AND_UNITS | DURATION | COMPLETED | 2026-01-19T07:00:00 | 2026-01-31T17:30:00 | 100 | 0.0 | 0.0 |  | PM SITE CONST WOOD | prog_complete, dt_fixed_dur_units, cost_expense |  |  |  |  |  |  |  |
| A3020 | Site Hoarding & Security | TT.3 | TASK_DEPENDENT | CAL-02 | 60.0 | 6.0 | 0.0 | FIXED_DURATION_AND_UNITS_TIME | DURATION | COMPLETED | 2026-01-12T07:00:00 | 2026-01-19T17:30:00 | 100 | 0.0 | 0.0 |  | CIV SITE CONST SUB-CIV | prog_complete |  |  |  |  |  |  |  |
| A3030 | Temporary Power Installation | TT.3 | TASK_DEPENDENT | CAL-02 | 80.0 | 8.0 | 0.0 | FIXED_DURATION_AND_UNITS_TIME | DURATION | COMPLETED | 2026-02-02T07:00:00 | 2026-02-11T17:30:00 | 100 | 0.0 | 0.0 |  | ELE SITE CONST SUB-EI | prog_complete |  |  |  |  |  |  |  |
| A3040 | Access Roads & Laydown (Temporary) | TT.3 | TASK_DEPENDENT | CAL-02 | 120.0 | 12.0 | 0.0 | FIXED_DURATION_AND_UNITS_TIME | DURATION | IN_PROGRESS | 2026-01-26T07:00:00 |  | 100 | 0.0 | 0.0 |  | CIV SITE CONST SUB-CIV | prog_stopped_zero_remaining | STOPPED ACTIVITY: Remaining Duration = 0, Duration % = 100, but NO Actual Finish. P6 sets the Remaining Early Finish to the Data Date. Naive engines produce a null/instant finish or crash. |  |  |  |  |  |  |
| A3100 | Scaffolding - Erect / Maintain / Dismantle | TT.3 | LEVEL_OF_EFFORT | CAL-02 | 0.0 | 0.0 | 0.0 | FIXED_DURATION_AND_UNITS_TIME | DURATION | NOT_STARTED |  |  | 0.0 | 0.0 | 0.0 |  | CIV SITE CONST SUB-CIV | type_loe |  |  |  |  |  |  |  |
| A3800 | Temporary Power Supply - Final Period of Operation | TT.3 | TASK_DEPENDENT | CAL-03 | 240.0 | 10.0 | 240.0 | FIXED_DURATION_AND_UNITS_TIME | DURATION | NOT_STARTED |  |  | 0.0 | 0.0 | 0.0 |  | ELE SITE CONST SUB-EI | rel_sf, lag_zero, sf_only_predecessor | Its ONLY predecessor is an SF (A8700 Energise Permanent Power). Temp power cannot FINISH until permanent power STARTS. Forward pass must set EF from the predecessor's ES, then back-calculate ES = EF - RD. |  |  |  |  |  |  |
| A3900 | Temporary Facilities Removal & Site Clean | TT.3 | TASK_DEPENDENT | CAL-02 | 100.0 | 10.0 | 100.0 | FIXED_DURATION_AND_UNITS_TIME | DURATION | NOT_STARTED |  |  | 0.0 | 0.0 | 0.0 | FINISH_ON_OR_AFTER 2026-11-30T17:30:00 | PM SITE HANDOVER WOOD | con_fnet, net_open_finish | FNET pushes the activity LATER (a rare forward-pass-delaying constraint). Also has NO SUCCESSOR (open end). |  |  |  |  |  |  |
| A4100 | Site Clearance & Earthworks | TT.4 | TASK_DEPENDENT | CAL-02 | 150.0 | 15.0 | 0.0 | FIXED_DURATION_AND_UNITS_TIME | DURATION | COMPLETED | 2026-01-26T07:00:00 | 2026-02-13T17:30:00 | 100 | 0.0 | 0.0 |  | CIV CWA-100 CWP-1001 CONST SUB-CIV | prog_complete |  |  | True EXCAVATION C-1100 |  |  |  |  |
| A4110 | Ground Improvement / Piling Mat | TT.4 | TASK_DEPENDENT | CAL-02 | 80.0 | 8.0 | 0.0 | FIXED_DURATION_AND_UNITS_TIME | DURATION | COMPLETED | 2026-02-02T07:00:00 | 2026-02-13T17:30:00 | 100 | 0.0 | 0.0 |  | CIV CWA-100 CWP-1001 CONST SUB-CIV | prog_complete |  |  |  |  |  |  |  |
| A4200 | Piling - Zone A | TT.4.1 | TASK_DEPENDENT | CAL-02 | 200.0 | 20.0 | 120.0 | FIXED_DURATION_AND_UNITS_TIME | PHYSICAL | IN_PROGRESS | 2026-02-16T07:00:00 |  | 40.0 | 35.0 | 0.0 |  | CIV CWA-100 CWP-1001 CONST SUB-CIV | prog_in_progress, pct_physical, code_steps, prog_rd_vs_pct_divergence | OD 200h, RD 120h -> Duration%% = (200-120)/200 = 40%%. Actual Duration (elapsed to DD on CAL-02) = 120h, so At-Completion Duration = 240h (40h over). Physical %% (35, from weighted STEPS) deliberately != Duration %% (40). Tests that EV uses the nominated %% type, not whichever is convenient. |  | True PHYSICAL_STEPS C-1110 |  |  |  |  |
| A4210 | Piling - Zone B | TT.4.1 | TASK_DEPENDENT | CAL-02 | 180.0 | 18.0 | 150.0 | FIXED_DURATION_AND_UNITS_TIME | DURATION | IN_PROGRESS | 2026-02-23T07:00:00 |  | 17.0 | 0.0 | 0.0 |  | CIV CWA-100 CWP-1002 CONST SUB-CIV | prog_suspended_no_resume | SUSPENDED and NOT resumed at the data date. Remaining work must be scheduled from the Data Date (or later), and the suspended window must be excluded from Actual Duration. |  |  | 2026-02-27T17:30:00 |  |  |  |
| A4220 | Pile Integrity Testing | TT.4.1 | TASK_DEPENDENT | CAL-01 | 40.0 | 5.0 | 24.0 | FIXED_DURATION_AND_UNITS_TIME | DURATION | IN_PROGRESS | 2026-02-25T08:00:00 |  | 40.0 | 0.0 | 0.0 |  | CIV CWA-100 CWP-1001 CONST SUB-CIV | prog_out_of_sequence, retained_logic_vs_progress_override | OUT OF SEQUENCE: has an FS predecessor (A4200) that is only 40%% complete, yet this activity has already started. RETAINED LOGIC: remaining work waits for A4200's remaining finish. PROGRESS OVERRIDE: remaining work starts at the Data Date, ignoring the incomplete predecessor. ACTUAL DATES: as Retained Logic but actuals are never moved. THREE DIFFERENT ANSWERS - this is the single highest-value activity in the fixture. |  |  |  |  |  |  |
| A4230 | Pile Cropping | TT.4.1 | TASK_DEPENDENT | CAL-02 | 120.0 | 12.0 | 60.0 | FIXED_DURATION_AND_UNITS_TIME | DURATION | IN_PROGRESS | 2026-02-17T07:00:00 |  | 50.0 | 0.0 | 0.0 |  | CIV CWA-100 CWP-1001 CONST SUB-CIV | prog_suspend_resume, prog_resume_after_data_date | Suspend BEFORE the data date, Resume AFTER it. Remaining work must not be scheduled before 2026-03-09 even though the Data Date is 2026-03-02. Confirm your engine's rule (and P6's) - behaviour here is a common divergence point. |  |  | 2026-02-19T17:30:00 | 2026-03-09T07:00:00 |  |  |
| A4300 | Excavate Foundations - Zone A | TT.4.2 | TASK_DEPENDENT | CAL-02 | 100.0 | 10.0 | 100.0 | FIXED_DURATION_AND_UNITS_TIME | DURATION | NOT_STARTED |  |  | 0.0 | 0.0 | 0.0 | START_ON_OR_AFTER 2026-03-16T07:00:00 | CIV CWA-100 CWP-1003 CONST SUB-CIV | con_snet |  |  | EXCAVATION 3 |  |  |  |  |
| A4310 | Blinding Concrete - Zone A | TT.4.2 | TASK_DEPENDENT | CAL-02 | 30.0 | 3.0 | 30.0 | FIXED_DURATION_AND_UNITS_TIME | DURATION | NOT_STARTED |  |  | 0.0 | 0.0 | 0.0 |  | CIV CWA-100 CWP-1003 SUB-CIV |  |  |  |  |  |  |  |  |
| A4320 | Rebar & Formwork - Zone A | TT.4.2 | TASK_DEPENDENT | CAL-02 | 120.0 | 12.0 | 120.0 | FIXED_DURATION_AND_UNITS_TIME | DURATION | NOT_STARTED |  |  | 0.0 | 0.0 | 0.0 |  | CIV CWA-100 CWP-1003 SUB-CIV |  |  |  |  |  |  |  |  |
| A4330 | Pour Foundations - Zone A | TT.4.2 | TASK_DEPENDENT | CAL-02 | 40.0 | 4.0 | 40.0 | FIXED_UNITS | DURATION | NOT_STARTED |  |  | 0.0 | 0.0 | 0.0 |  | CIV CWA-100 CWP-1003 SUB-CIV | dt_fixed_units, res_material | FIXED UNITS: 850 m3 of concrete is invariant. If duration changes, units/time must flex - units must not. |  |  |  |  |  |  |
| A4340 | Concrete Cure - Zone A | TT.4.2 | TASK_DEPENDENT | CAL-03 | 168.0 | 7.0 | 168.0 | FIXED_DURATION_AND_UNITS_TIME | DURATION | NOT_STARTED |  |  | 0.0 | 0.0 | 0.0 |  | CIV CWA-100 CWP-1003 CONTINUOUS | cal_24h, elapsed_duration | Cure modelled as an ACTIVITY on the 24-hour calendar: 168h = 7 elapsed days. Compare with A4440, where the same cure is modelled as a LAG instead. |  |  |  |  |  |  |
| A4350 | Strip Formwork - Zone A | TT.4.2 | TASK_DEPENDENT | CAL-02 | 40.0 | 4.0 | 40.0 | FIXED_DURATION_AND_UNITS_TIME | DURATION | NOT_STARTED |  |  | 0.0 | 0.0 | 0.0 |  | CIV CWA-100 CWP-1003 SUB-CIV |  |  |  |  |  |  |  |  |
| A4360 | Backfill - Zone A | TT.4.2 | TASK_DEPENDENT | CAL-02 | 60.0 | 6.0 | 60.0 | FIXED_DURATION_AND_UNITS_TIME | DURATION | NOT_STARTED |  |  | 0.0 | 0.0 | 0.0 |  | CIV CWA-100 CWP-1003 SUB-CIV | lag_fs_negative |  |  |  |  |  |  |  |
| A4400 | Excavate Foundations - Zone B | TT.4.2 | TASK_DEPENDENT | CAL-02 | 100.0 | 10.0 | 100.0 | FIXED_DURATION_AND_UNITS_TIME | DURATION | NOT_STARTED |  |  | 0.0 | 0.0 | 0.0 |  | CIV CWA-100 CWP-1004 SUB-CIV | lag_ff_positive |  |  |  |  |  |  |  |
| A4410 | Blinding Concrete - Zone B | TT.4.2 | TASK_DEPENDENT | CAL-02 | 30.0 | 3.0 | 30.0 | FIXED_DURATION_AND_UNITS_TIME | DURATION | NOT_STARTED |  |  | 0.0 | 0.0 | 0.0 |  | CIV CWA-100 CWP-1004 SUB-CIV |  |  |  |  |  |  |  |  |
| A4420 | Rebar & Formwork - Zone B | TT.4.2 | TASK_DEPENDENT | CAL-02 | 120.0 | 12.0 | 120.0 | FIXED_DURATION_AND_UNITS_TIME | DURATION | NOT_STARTED |  |  | 0.0 | 0.0 | 0.0 |  | CIV CWA-100 CWP-1004 SUB-CIV |  |  |  |  |  |  |  |  |
| A4430 | Pour Foundations - Zone B | TT.4.2 | TASK_DEPENDENT | CAL-02 | 40.0 | 4.0 | 40.0 | FIXED_UNITS | DURATION | NOT_STARTED |  |  | 0.0 | 0.0 | 0.0 |  | CIV CWA-100 CWP-1004 SUB-CIV | dt_fixed_units, res_material |  |  |  |  |  |  |  |
| A4440 | Strip Formwork - Zone B | TT.4.2 | TASK_DEPENDENT | CAL-02 | 40.0 | 4.0 | 40.0 | FIXED_DURATION_AND_UNITS_TIME | DURATION | NOT_STARTED |  |  | 0.0 | 0.0 | 0.0 |  | CIV CWA-100 CWP-1004 SUB-CIV | lag_calendar_24h, lag_calendar_setting_sensitive | Cure modelled as an FS + 168h LAG on the 24-HOUR calendar (not the predecessor's CAL-02). If your engine resolves the lag on CAL-02 (10h/day, no Sundays) it will produce a date roughly two weeks later than the correct 7 elapsed days. This is THE classic P6 lag-calendar bug. |  |  |  |  |  |  |
| A4450 | Backfill - Zone B | TT.4.2 | TASK_DEPENDENT | CAL-02 | 60.0 | 6.0 | 60.0 | FIXED_DURATION_AND_UNITS_TIME | DURATION | NOT_STARTED |  |  | 0.0 | 0.0 | 0.0 |  | CIV CWA-100 CWP-1004 SUB-CIV |  |  |  |  |  |  |  |  |
| A4500 | Underground Piping & Drainage | TT.4.3 | TASK_DEPENDENT | CAL-02 | 160.0 | 16.0 | 160.0 | FIXED_DURATION_AND_UNITS_TIME | DURATION | NOT_STARTED |  |  | 0.0 | 0.0 | 0.0 |  | CIV CWA-100 CWP-1005 SUB-CIV | net_multiple_predecessors |  |  |  |  |  |  |  |
| A4510 | Underground Electrical Ducts | TT.4.3 | TASK_DEPENDENT | CAL-02 | 120.0 | 12.0 | 120.0 | FIXED_DURATION_AND_UNITS_TIME | DURATION | NOT_STARTED |  |  | 0.0 | 0.0 | 0.0 |  | ELE CWA-100 CWP-1005 SUB-EI | lag_ss_zero |  |  |  |  |  |  |  |
| A4520 | Cathodic Protection Installation | TT.4.3 | TASK_DEPENDENT | CAL-02 | 60.0 | 6.0 | 60.0 | FIXED_DURATION_AND_UNITS_TIME | DURATION | NOT_STARTED |  |  | 0.0 | 0.0 | 0.0 |  | ELE CWA-100 CWP-1005 SUB-EI | lag_ff_zero, net_dangling_start | DANGLING START: its only predecessor link is an FF, so nothing controls when it STARTS. Its early start collapses to (early finish - duration). DCMA check 2 (leads/lags) and dangle checks should flag it. |  |  |  |  |  |  |
| A4600 | Permanent Hardstanding & Roads | TT.4.3 | TASK_DEPENDENT | CAL-02 | 140.0 | 14.0 | 140.0 | FIXED_DURATION_AND_UNITS_TIME | DURATION | NOT_STARTED |  |  | 0.0 | 0.0 | 0.0 |  | CIV CWA-100 CWP-1006 SUB-CIV | net_redundant_logic | Has a REDUNDANT predecessor (A4110) already implied transitively via A4200->...->A4450. Free-float and driving-relationship logic must handle it; a redundancy report should flag it. |  |  |  |  |  |  |
| A4999 | Civils Complete | TT.4 | FINISH_MILESTONE | CAL-01 | 0.0 | 0.0 | 0.0 | FIXED_DURATION_AND_UNITS_TIME | DURATION | NOT_STARTED |  |  | 0.0 | 0.0 | 0.0 |  | CIV CWA-100 CONST | type_finish_ms, net_merge_point |  |  |  |  |  |  |  |
| A5100 | Erect Pipe Rack Steel - Zone A | TT.5 | TASK_DEPENDENT | CAL-02 | 200.0 | 20.0 | 200.0 | FIXED_DURATION_AND_UNITS_TIME | DURATION | NOT_STARTED |  |  | 0.0 | 0.0 | 0.0 |  | STL CWA-200 CWP-1007 SUB-STL DAY | lag_exceeds_pred_duration, res_curve_bell | Predecessor A2300 has an OD of 40h but the FS lag is 80h - a lag longer than the predecessor's duration. |  | True LIFTING 4 |  |  |  |  |
| A5110 | Grout Baseplates - Zone A | TT.5 | TASK_DEPENDENT | CAL-02 | 40.0 | 4.0 | 40.0 | FIXED_DURATION_AND_UNITS_TIME | DURATION | NOT_STARTED |  |  | 0.0 | 0.0 | 0.0 |  | STL CWA-200 CWP-1007 SUB-STL | lag_ss_positive |  |  |  |  |  |  |  |
| A5120 | Torque & Plumb Steel - Zone A | TT.5 | TASK_DEPENDENT | CAL-02 | 60.0 | 6.0 | 60.0 | FIXED_DURATION_AND_UNITS_TIME | DURATION | NOT_STARTED |  |  | 0.0 | 0.0 | 0.0 |  | STL CWA-200 CWP-1007 SUB-STL | lag_ff_zero |  |  |  |  |  |  |  |
| A5130 | Handrails & Grating - Zone A | TT.5 | TASK_DEPENDENT | CAL-02 | 100.0 | 10.0 | 100.0 | FIXED_DURATION_AND_UNITS_TIME | DURATION | NOT_STARTED |  |  | 0.0 | 0.0 | 0.0 |  | STL CWA-200 CWP-1007 SUB-STL |  |  |  |  |  |  |  |  |
| A5200 | Erect Pipe Rack Steel - Zone B | TT.5 | TASK_DEPENDENT | CAL-02 | 220.0 | 22.0 | 220.0 | FIXED_DURATION_AND_UNITS_TIME | DURATION | NOT_STARTED |  |  | 0.0 | 0.0 | 0.0 | START_ON_OR_AFTER 2026-05-04T07:00:00 | STL CWA-200 CWP-1008 SUB-STL | con_snet, con_secondary_fnlt, con_on_nonworkday | TWO tests in one. (1) SECONDARY CONSTRAINT: primary SNET on the forward pass + secondary FNLT on the backward pass. (2) The SNET date 2026-05-04 is the Early May BANK HOLIDAY - a NON-WORK day on CAL-02. The engine must roll the constrained start forward to the next working period (Tue 05-May 07:00), not sit it on a non-work instant. |  | True LIFTING |  |  | FINISH_ON_OR_BEFORE 2026-06-26T17:30:00 |  |
| A5210 | Grout Baseplates - Zone B | TT.5 | TASK_DEPENDENT | CAL-02 | 40.0 | 4.0 | 40.0 | FIXED_DURATION_AND_UNITS_TIME | DURATION | NOT_STARTED |  |  | 0.0 | 0.0 | 0.0 |  | STL CWA-200 CWP-1008 SUB-STL | lag_ss_positive |  |  |  |  |  |  |  |
| A5220 | Torque & Plumb Steel - Zone B | TT.5 | TASK_DEPENDENT | CAL-02 | 60.0 | 6.0 | 60.0 | FIXED_DURATION_AND_UNITS_TIME | DURATION | NOT_STARTED |  |  | 0.0 | 0.0 | 0.0 |  | STL CWA-200 CWP-1008 SUB-STL | lag_ff_zero |  |  |  |  |  |  |  |
| A5230 | Handrails & Grating - Zone B | TT.5 | TASK_DEPENDENT | CAL-02 | 100.0 | 10.0 | 100.0 | FIXED_DURATION_AND_UNITS_TIME | DURATION | NOT_STARTED |  |  | 0.0 | 0.0 | 0.0 |  | STL CWA-200 CWP-1008 SUB-STL |  |  |  |  |  |  |  |  |
| A5300 | Erect Equipment Support Steel | TT.5 | TASK_DEPENDENT | CAL-02 | 120.0 | 12.0 | 120.0 | FIXED_DURATION_AND_UNITS_TIME | DURATION | NOT_STARTED |  |  | 0.0 | 0.0 | 0.0 |  | STL CWA-200 CWP-1007 SUB-STL |  |  |  |  |  |  |  |  |
| A5400 | Steel Inspection & Punchlist | TT.5 | TASK_DEPENDENT | CAL-01 | 40.0 | 5.0 | 40.0 | FIXED_DURATION_AND_UNITS_TIME | DURATION | NOT_STARTED |  |  | 0.0 | 0.0 | 0.0 |  | STL CWA-200 WOOD | net_merge_point |  |  |  |  |  |  |  |
| A5500 | Night Shift Steel Bolt-Up (SIMOPS) | TT.5 | TASK_DEPENDENT | CAL-04 | 60.0 | 6.0 | 60.0 | FIXED_DURATION_AND_UNITS_TIME | DURATION | NOT_STARTED |  |  | 0.0 | 0.0 | 0.0 |  | STL CWA-200 CWP-1007 SUB-STL NIGHT | cal_night_crosses_midnight | Runs on CAL-04, a 20:00-06:00 shift that CROSSES MIDNIGHT. An activity starting Mon 20:00 with a 60h duration must be scheduled across the Mon 20:00-24:00 / Tue 00:00-06:00 boundary as one continuous shift, and its 'days' display (6d at 10h/day) must not be derived from the calendar day count. |  | 5 HOT WORK |  |  |  |  |
| A6000 | Heavy Lift Study & Ground Bearing Check | TT.6 | TASK_DEPENDENT | CAL-01 | 40.0 | 5.0 | 40.0 | FIXED_DURATION_AND_UNITS_TIME | DURATION | NOT_STARTED |  |  | 0.0 | 0.0 | 0.0 |  | MEC CWA-300 WOOD | lag_long |  |  |  |  |  |  |  |
| A6100 | Set Module PAU-301 (Heavy Lift) | TT.6 | RESOURCE_DEPENDENT | CAL-06 | 60.0 | 7.5 | 60.0 | FIXED_DURATION_AND_UNITS_TIME | DURATION | NOT_STARTED |  |  | 0.0 | 0.0 | 0.0 |  | MEC CWA-300 CWP-1009 SUB-MECH 300-01 | type_resource_dependent, res_calendar_drives, cost_expense, lag_long | RESOURCE DEPENDENT: it must be scheduled on the RESOURCE's calendar (RCAL-CRANE600: on hire 27-Jul to 21-Aug ONLY), NOT on its own activity calendar (CAL-06). If your engine schedules it on CAL-06 you'll get a start in May. Also has an FS + 400h lag from A6000 (a very long lag) and a lump-sum expense. |  | PAU-301 LIFTING 5 True |  |  |  |  |
| A6200 | Set Absorber Column T-301 | TT.6 | TASK_DEPENDENT | CAL-06 | 80.0 | 10.0 | 80.0 | FIXED_DURATION_AND_UNITS_TIME | DURATION | NOT_STARTED |  |  | 0.0 | 0.0 | 0.0 |  | MEC CWA-300 CWP-1009 SUB-MECH 300-01 | con_expected_finish, res_overallocation, type_task_vs_resource_contrast | Deliberate CONTRAST with A6100: same crane resource (NL-CRANE600, max 1 unit), SS+0 to A6100 so they overlap, but this one is TASK DEPENDENT. Two tests: (1) EXPECTED FINISH - with 'Use Expected Finish Dates' ON, the engine recalculates Remaining Duration so the activity finishes on 2026-08-14. (2) RESOURCE OVER-ALLOCATION - one crane, two concurrent activities. Levelling must serialise them. |  | T-301 LIFTING 5 True |  |  |  | 2026-08-14T16:00:00 |
| A6300 | Set Amine Pumps P-301A/B | TT.6 | TASK_DEPENDENT | CAL-02 | 60.0 | 6.0 | 60.0 | FIXED_DURATION_AND_UNITS_TIME | DURATION | NOT_STARTED |  |  | 0.0 | 0.0 | 0.0 |  | MEC CWA-300 CWP-1009 SUB-MECH 300-02 | net_dangling_activity, lag_ss_positive | FULLY DANGLING: SS predecessor only (A6100), SS successor only (A7300). Nothing controls its finish, and it cannot transmit finish-driven delay downstream. A classic schedule-quality defect - your engine should still schedule it correctly AND flag it. |  | P-301A/B |  |  |  |  |
| A6400 | Set Heat Exchangers E-301/302 | TT.6 | TASK_DEPENDENT | CAL-02 | 80.0 | 8.0 | 80.0 | FIXED_DURATION_AND_UNITS_TIME | DURATION | NOT_STARTED |  |  | 0.0 | 0.0 | 0.0 |  | MEC CWA-300 CWP-1009 SUB-MECH 300-02 |  |  |  | E-301/E-302 |  |  |  |  |
| A6500 | Mechanical Alignment & Grouting | TT.6 | TASK_DEPENDENT | CAL-02 | 100.0 | 10.0 | 100.0 | FIXED_DURATION_AND_UNITS_TIME | DURATION | NOT_STARTED |  |  | 0.0 | 0.0 | 0.0 |  | MEC CWA-300 CWP-1009 SUB-MECH |  |  |  |  |  |  |  |  |
| A6600 | Equipment Punchlist | TT.6 | TASK_DEPENDENT | CAL-01 | 40.0 | 5.0 | 40.0 | FIXED_DURATION_AND_UNITS_TIME | DURATION | NOT_STARTED |  |  | 0.0 | 0.0 | 0.0 |  | MEC CWA-300 WOOD |  |  |  |  |  |  |  |  |

| id | name | wbs | activity_type | calendar | original_duration_h | original_duration_days_display | remaining_duration_h | duration_type | percent_complete_type | status | duration_percent_complete | physical_percent_complete | units_percent_complete | primary_constraint | activity_codes | test_tags | note | udfs | external_late_finish |
| --- | --- | --- | --- | --- | --- | --- | --- | --- | --- | --- | --- | --- | --- | --- | --- | --- | --- | --- | --- |
| A7100 | Pipe Erection - Rack Zone A | TT.7.1 | TASK_DEPENDENT | CAL-02 | 300.0 | 30.0 | 300.0 | FIXED_UNITS | PHYSICAL | NOT_STARTED | 0.0 | 0.0 | 0.0 |  | PIP CWA-400 CWP-1010 SUB-MECH 300-01 | pct_physical, code_steps, dt_fixed_units, lag_ss_positive, res_assignment_lag, res_curve_front_loaded | Kitchen-sink activity: Physical %% via weighted STEPS, FIXED UNITS duration type, an SS+50h predecessor, a resource assignment with a 24h LAG (welders join 3 days in), and a FRONT_LOADED resource curve. | PHYSICAL_STEPS C-4100 |  |
| A7110 | Pipe Supports - Zone A | TT.7.1 | TASK_DEPENDENT | CAL-02 | 120.0 | 12.0 | 120.0 | FIXED_DURATION_AND_UNITS_TIME | DURATION | NOT_STARTED | 0.0 | 0.0 | 0.0 |  | PIP CWA-400 CWP-1010 SUB-MECH | lag_ss_zero |  |  |  |
| A7120 | Small Bore & Tubing - Zone A | TT.7.1 | TASK_DEPENDENT | CAL-02 | 140.0 | 14.0 | 140.0 | FIXED_DURATION_AND_UNITS_TIME | DURATION | NOT_STARTED | 0.0 | 0.0 | 0.0 |  | PIP CWA-400 CWP-1010 SUB-MECH | lag_ff_positive |  |  |  |
| A7130 | Valve Installation - Zone A | TT.7.1 | TASK_DEPENDENT | CAL-02 | 80.0 | 8.0 | 80.0 | FIXED_DURATION_AND_UNITS_TIME | DURATION | NOT_STARTED | 0.0 | 0.0 | 0.0 |  | PIP CWA-400 CWP-1010 SUB-MECH |  |  |  |  |
| A7200 | Pipe Erection - Rack Zone B | TT.7.1 | TASK_DEPENDENT | CAL-02 | 320.0 | 32.0 | 320.0 | FIXED_UNITS_TIME | DURATION | NOT_STARTED | 0.0 | 0.0 | 0.0 |  | PIP CWA-400 CWP-1010 SUB-MECH 300-02 | dt_fixed_units_time, lag_ss_positive |  |  |  |
| A7210 | Pipe Supports - Zone B | TT.7.1 | TASK_DEPENDENT | CAL-02 | 120.0 | 12.0 | 120.0 | FIXED_DURATION_AND_UNITS_TIME | DURATION | NOT_STARTED | 0.0 | 0.0 | 0.0 |  | PIP CWA-400 CWP-1010 SUB-MECH |  |  |  |  |
| A7220 | Small Bore & Tubing - Zone B | TT.7.1 | TASK_DEPENDENT | CAL-02 | 140.0 | 14.0 | 140.0 | FIXED_DURATION_AND_UNITS_TIME | DURATION | NOT_STARTED | 0.0 | 0.0 | 0.0 |  | PIP CWA-400 CWP-1010 SUB-MECH |  |  |  |  |
| A7230 | Valve Installation - Zone B | TT.7.1 | TASK_DEPENDENT | CAL-02 | 80.0 | 8.0 | 80.0 | FIXED_DURATION_AND_UNITS_TIME | DURATION | NOT_STARTED | 0.0 | 0.0 | 0.0 |  | PIP CWA-400 CWP-1010 SUB-MECH |  |  |  |  |
| A7300 | Equipment Piping & In-Battery Tie-ins | TT.7.1 | TASK_DEPENDENT | CAL-02 | 200.0 | 20.0 | 200.0 | FIXED_DURATION_AND_UNITS_TIME | DURATION | NOT_STARTED | 0.0 | 0.0 | 0.0 |  | PIP CWA-400 CWP-1010 SUB-MECH | net_dangling_partner |  |  |  |
| A7400 | NDT & Weld Inspection | TT.7.1 | TASK_DEPENDENT | CAL-01 | 80.0 | 10.0 | 80.0 | FIXED_DURATION_AND_UNITS | DURATION | NOT_STARTED | 0.0 | 0.0 | 0.0 |  | PIP CWA-400 WOOD | dt_fixed_dur_units, lag_ff_zero, net_merge_point |  |  |  |
| A7500 | Punchlist & Reinstatement (Piping) | TT.7.1 | TASK_DEPENDENT | CAL-02 | 60.0 | 6.0 | 60.0 | FIXED_DURATION_AND_UNITS_TIME | DURATION | NOT_STARTED | 0.0 | 0.0 | 0.0 |  | PIP CWA-400 SUB-MECH |  |  |  |  |
| A7550 | Piping Turnover Package Sign-off | TT.7.1 | TASK_DEPENDENT | CAL-01 | 0.0 | 0.0 | 0.0 | FIXED_DURATION_AND_UNITS_TIME | DURATION | NOT_STARTED | 0.0 | 0.0 | 0.0 |  | PIP CWA-400 WOOD | net_zero_duration_task | ZERO-DURATION TASK_DEPENDENT activity (NOT a milestone). P6 permits this and it behaves subtly differently from a milestone: it has both a start and a finish, it can carry resources, and it obeys duration-type rules. Many home-grown engines divide by zero or collapse it into a milestone. |  |  |
| A7600 | Hydrotest Preparation | TT.7.2 | TASK_DEPENDENT | CAL-02 | 80.0 | 8.0 | 80.0 | FIXED_DURATION_AND_UNITS_TIME | DURATION | NOT_STARTED | 0.0 | 0.0 | 0.0 | START_ON_OR_BEFORE 2026-09-30T07:00:00 | PIP CWA-400 SUB-MECH | con_snlt, float_negative_driver | SNLT is a BACKWARD-PASS (late) constraint. It caps the Late Start. If the forward pass pushes the Early Start beyond 2026-09-30, this activity goes NEGATIVE FLOAT. It must never move the Early Start. |  |  |
| A7700 | Hydrotest - System 300-01 | TT.7.2 | TASK_DEPENDENT | CAL-02 | 60.0 | 6.0 | 60.0 | FIXED_DURATION_AND_UNITS_TIME | DURATION | NOT_STARTED | 0.0 | 0.0 | 0.0 |  | PIP CWA-400 SUB-MECH 300-01 | res_overallocation |  |  |  |
| A7710 | Hydrotest Hold / Stabilisation | TT.7.2 | TASK_DEPENDENT | CAL-03 | 24.0 | 1.0 | 24.0 | FIXED_DURATION_AND_UNITS_TIME | DURATION | NOT_STARTED | 0.0 | 0.0 | 0.0 |  | PIP CWA-400 CONTINUOUS 300-01 | cal_24h, elapsed_duration |  |  |  |
| A7720 | Depressurise, Drain & Dry | TT.7.2 | TASK_DEPENDENT | CAL-02 | 40.0 | 4.0 | 40.0 | FIXED_DURATION_AND_UNITS_TIME | DURATION | NOT_STARTED | 0.0 | 0.0 | 0.0 |  | PIP CWA-400 SUB-MECH 300-01 |  |  |  |  |
| A7730 | Hydrotest - System 300-02 | TT.7.2 | TASK_DEPENDENT | CAL-02 | 60.0 | 6.0 | 60.0 | FIXED_DURATION_AND_UNITS_TIME | DURATION | NOT_STARTED | 0.0 | 0.0 | 0.0 |  | PIP CWA-400 SUB-MECH 300-02 | res_overallocation, levelling_test | Shares the single NL-HYDROPUMP (max 1) with A7700 and starts at the same time (both FS+0 from A7600). Unlevelled: 200%% allocation. Levelled: must serialise. |  |  |
| A7740 | Reinstatement Post-Hydrotest | TT.7.2 | TASK_DEPENDENT | CAL-02 | 80.0 | 8.0 | 80.0 | FIXED_DURATION_AND_UNITS_TIME | DURATION | NOT_STARTED | 0.0 | 0.0 | 0.0 |  | PIP CWA-400 SUB-MECH |  |  |  |  |
| A8000 | Cable Tray & Containment | TT.8 | TASK_DEPENDENT | CAL-02 | 160.0 | 16.0 | 160.0 | FIXED_DURATION_AND_UNITS_TIME | DURATION | NOT_STARTED | 0.0 | 0.0 | 0.0 |  | ELE CWA-500 SUB-EI |  |  |  |  |
| A8010 | Cable Pulling - Power | TT.8 | TASK_DEPENDENT | CAL-02 | 200.0 | 20.0 | 200.0 | FIXED_DURATION_AND_UNITS_TIME | UNITS | NOT_STARTED | 0.0 | 0.0 | 0.0 |  | ELE CWA-500 SUB-EI | lag_ss_negative, pct_units, pathological | SS -40h: the successor may START FOUR DAYS BEFORE its predecessor starts. Logically indefensible and a DCMA check-2 violation - which is exactly why it is here. Also uses UNITS %% complete (12,000 m of cable). | UNITS |  |
| A8020 | Cable Pulling - Control & Instrument | TT.8 | TASK_DEPENDENT | CAL-02 | 180.0 | 18.0 | 180.0 | FIXED_DURATION_AND_UNITS_TIME | DURATION | NOT_STARTED | 0.0 | 0.0 | 0.0 |  | ELE CWA-500 SUB-EI | lag_ss_positive |  |  |  |
| A8100 | Local Panels & Junction Boxes | TT.8 | TASK_DEPENDENT | CAL-02 | 100.0 | 10.0 | 100.0 | FIXED_DURATION_AND_UNITS_TIME | DURATION | NOT_STARTED | 0.0 | 0.0 | 0.0 |  | ELE CWA-500 SUB-EI |  |  |  |  |
| A8200 | Instrument Installation | TT.8 | TASK_DEPENDENT | CAL-02 | 160.0 | 16.0 | 160.0 | FIXED_DURATION_AND_UNITS_TIME | DURATION | NOT_STARTED | 0.0 | 0.0 | 0.0 |  | ELE CWA-500 SUB-EI | lag_ff_positive |  |  |  |
| A8300 | HV Switchgear Installation & Termination | TT.8 | RESOURCE_DEPENDENT | CAL-01 | 120.0 | 15.0 | 120.0 | FIXED_DURATION_AND_UNITS_TIME | DURATION | NOT_STARTED | 0.0 | 0.0 | 0.0 |  | ELE CWA-500 SUB-EI | type_resource_dependent, cal_4day_week, lag_calendar_setting_sensitive | TWO tests. (1) RESOURCE DEPENDENT on LAB-EI-SPEC, whose calendar (RCAL-SPECIALIST) is a MON-THU 4-day week - so no work ever lands on a Friday, even though the activity's own calendar (CAL-01) is Mon-Fri. (2) Its predecessor A2230 is on CAL-03 (24h) and the FS lag is 40h. Change 'Calendar for scheduling relationship lag' between Predecessor / Successor / 24-Hour and this date MUST move. If it doesn't, your lag resolution is hard-coded. | HV ISOLATION 4 |  |
| A8400 | Cable Termination & Glanding | TT.8 | TASK_DEPENDENT | CAL-02 | 200.0 | 20.0 | 200.0 | FIXED_DURATION_AND_UNITS_TIME | DURATION | NOT_STARTED | 0.0 | 0.0 | 0.0 |  | ELE CWA-500 SUB-EI | net_merge_point |  |  |  |
| A8500 | Loop Checks & Continuity Testing | TT.8 | TASK_DEPENDENT | CAL-01 | 120.0 | 15.0 | 120.0 | FIXED_DURATION_AND_UNITS_TIME | DURATION | NOT_STARTED | 0.0 | 0.0 | 0.0 |  | ELE CWA-500 PRECOM SUB-EI |  |  |  |  |
| A8600 | Fibre & Network Commissioning | TT.8 | TASK_DEPENDENT | CAL-01 | 60.0 | 7.5 | 60.0 | FIXED_DURATION_AND_UNITS_TIME | DURATION | NOT_STARTED | 0.0 | 0.0 | 0.0 |  | ELE CWA-500 PRECOM SUB-EI |  |  |  |  |
| A8700 | Energise Permanent Power (HV) | TT.8 | TASK_DEPENDENT | CAL-01 | 40.0 | 5.0 | 40.0 | FIXED_DURATION_AND_UNITS_TIME | DURATION | NOT_STARTED | 0.0 | 0.0 | 0.0 |  | ELE CWA-500 PRECOM SUB-EI | sf_predecessor |  | HV ISOLATION 5 |  |
| A9000 | Fireproofing - Structural Steel | TT.9 | TASK_DEPENDENT | CAL-02 | 140.0 | 14.0 | 140.0 | FIXED_DURATION_AND_UNITS_TIME | DURATION | NOT_STARTED | 0.0 | 0.0 | 0.0 |  | INS CWA-600 SUB-INS | lag_ff_negative, pathological | FF -30h: this activity is allowed to FINISH 3 days BEFORE its predecessor finishes. Negative FF is the least well-tested relationship in most engines. |  |  |
| A9100 | Insulation - Piping & Equipment | TT.9 | TASK_DEPENDENT | CAL-02 | 240.0 | 24.0 | 240.0 | FIXED_DURATION_AND_UNITS_TIME | DURATION | NOT_STARTED | 0.0 | 0.0 | 0.0 |  | INS CWA-600 SUB-INS |  |  |  |  |
| A9200 | Painting - Touch-up & Final Coat | TT.9 | TASK_DEPENDENT | CAL-02 | 160.0 | 16.0 | 160.0 | FIXED_DURATION_AND_UNITS_TIME | DURATION | NOT_STARTED | 0.0 | 0.0 | 0.0 |  | INS CWA-600 SUB-INS |  |  | True |  |
| A9300 | Labelling, Tagging & Line Marking | TT.9 | TASK_DEPENDENT | CAL-01 | 60.0 | 7.5 | 60.0 | FIXED_DURATION_AND_UNITS_TIME | DURATION | NOT_STARTED | 0.0 | 0.0 | 0.0 |  | INS CWA-600 SUB-INS |  |  |  |  |
| A9400 | Final Site Clean & Snagging Prep | TT.9 | TASK_DEPENDENT | CAL-02 | 80.0 | 8.0 | 80.0 | FIXED_DURATION_AND_UNITS_TIME | DURATION | NOT_STARTED | 0.0 | 0.0 | 0.0 | AS_LATE_AS_POSSIBLE | PM CWA-600 WOOD | con_alap, float_zero_free | ALAP: the activity is pushed as late as its successors allow. After scheduling it must have FREE FLOAT = 0 while its TOTAL FLOAT is unchanged. Implemented as a zero-free-float pass, not as a date constraint. |  |  |
| A10000 | Tie-in Preparation & Isolation Planning | TT.10 | TASK_DEPENDENT | CAL-01 | 80.0 | 10.0 | 80.0 | FIXED_DURATION_AND_UNITS_TIME | DURATION | NOT_STARTED | 0.0 | 0.0 | 0.0 |  | PIP CWA-TA CONST WOOD |  |  |  |  |
| A10100 | TA Window Opens | TT.10 | START_MILESTONE | CAL-03 | 0.0 | 0.0 | 0.0 | FIXED_DURATION_AND_UNITS_TIME | DURATION | NOT_STARTED | 0.0 | 0.0 | 0.0 | MANDATORY_START 2026-10-05T06:00:00 | PM CWA-TA TA | con_mandatory_start, breaks_logic | MANDATORY START overrides the network in BOTH passes. Even if predecessors slip past 05-Oct, this milestone STAYS on 05-Oct - which means its predecessor logic can be violated and negative float propagates BACKWARDS through A10000. Most home-grown engines quietly treat this as an SNET and get it wrong. |  |  |
| A10200 | Break Containment & Isolate Existing Lines | TT.10 | TASK_DEPENDENT | CAL-05 | 24.0 | 2.0 | 24.0 | FIXED_DURATION_AND_UNITS_TIME | DURATION | NOT_STARTED | 0.0 | 0.0 | 0.0 |  | PIP CWA-TA TA WOOD | cal_window_only |  | CONFINED SPACE 5 |  |
| A10300 | Hot Tap / Tie-in Welds (12 no.) | TT.10 | TASK_DEPENDENT | CAL-05 | 96.0 | 8.0 | 96.0 | FIXED_DURATION_AND_UNITS_TIME | DURATION | NOT_STARTED | 0.0 | 0.0 | 0.0 |  | PIP CWA-TA TA SUB-MECH | cal_window_only, cost_expense |  | HOT WORK 5 |  |
| A10400 | Tie-in NDT & PWHT | TT.10 | TASK_DEPENDENT | CAL-05 | 36.0 | 3.0 | 36.0 | FIXED_DURATION_AND_UNITS_TIME | DURATION | NOT_STARTED | 0.0 | 0.0 | 0.0 |  | PIP CWA-TA TA WOOD | cal_window_only |  |  |  |
| A10450 | Legacy Control System - Parallel Run | TT.10 | TASK_DEPENDENT | CAL-03 | 120.0 | 5.0 | 120.0 | FIXED_DURATION_AND_UNITS_TIME | DURATION | NOT_STARTED | 0.0 | 0.0 | 0.0 |  | ELE CWA-TA COMM CONTINUOUS | rel_sf, lag_sf_positive | SF +16h: the legacy system must keep running until 16h AFTER the new system's commissioning STARTS. This is the textbook legitimate use of Start-to-Finish. |  |  |
| A10460 | Legacy Instrument Air - Maintain Supply | TT.10 | TASK_DEPENDENT | CAL-03 | 200.0 | 8.33 | 200.0 | FIXED_DURATION_AND_UNITS_TIME | DURATION | NOT_STARTED | 0.0 | 0.0 | 0.0 |  | ELE CWA-TA COMM CONTINUOUS | rel_sf, lag_sf_negative, pathological | SF -8h: pure torture. The successor's finish may precede the predecessor's start by 8h. There is no defensible planning reason for this - it is here purely to prove your SF arithmetic handles a negative lag without sign errors. |  |  |
| A10500 | TA Window Closes | TT.10 | FINISH_MILESTONE | CAL-03 | 0.0 | 0.0 | 0.0 | FIXED_DURATION_AND_UNITS_TIME | DURATION | NOT_STARTED | 0.0 | 0.0 | 0.0 | MANDATORY_FINISH 2026-10-16T18:00:00 | PM CWA-TA TA | con_mandatory_finish, breaks_logic | MANDATORY FINISH: pinned in both passes. If A10400 runs long, the mandatory finish will sit BEFORE its predecessor's early finish - a genuinely impossible schedule that P6 will still produce. Your engine must produce it too (and flag it), not silently 'fix' it. |  |  |
| A10600 | Reinstate Insulation & Painting (Tie-ins) | TT.10 | TASK_DEPENDENT | CAL-02 | 60.0 | 6.0 | 60.0 | FIXED_DURATION_AND_UNITS_TIME | DURATION | NOT_STARTED | 0.0 | 0.0 | 0.0 |  | INS CWA-TA SUB-INS |  |  |  |  |
| A11000 | Commissioning Start | TT.11 | START_MILESTONE | CAL-01 | 0.0 | 0.0 | 0.0 | FIXED_DURATION_AND_UNITS_TIME | DURATION | NOT_STARTED | 0.0 | 0.0 | 0.0 |  | COM COMM WOOD | type_start_ms, net_merge_point |  |  |  |
| A11050 | System Walkdowns & Punch Clear (300-01) | TT.11 | TASK_DEPENDENT | CAL-02 | 80.0 | 8.0 | 80.0 | FIXED_DURATION_AND_UNITS_TIME | DURATION | NOT_STARTED | 0.0 | 0.0 | 0.0 |  | COM PRECOM 300-01 WOOD |  |  |  |  |
| A11100 | Commissioning - System 300-01 | TT.11 | TASK_DEPENDENT | CAL-03 | 160.0 | 6.67 | 160.0 | FIXED_DURATION_AND_UNITS_TIME | DURATION | NOT_STARTED | 0.0 | 0.0 | 0.0 |  | COM COMM 300-01 CONTINUOUS WOOD | cal_24h, sf_predecessor |  |  |  |
| A11200 | Commissioning - System 300-02 | TT.11 | TASK_DEPENDENT | CAL-03 | 140.0 | 5.83 | 140.0 | FIXED_DURATION_AND_UNITS_TIME | DURATION | NOT_STARTED | 0.0 | 0.0 | 0.0 |  | COM COMM 300-02 CONTINUOUS WOOD | cal_24h, sf_predecessor |  |  |  |
| A11300 | Commissioning - System 300-03 (Utilities) | TT.11 | TASK_DEPENDENT | CAL-03 | 120.0 | 5.0 | 120.0 | FIXED_DURATION_AND_UNITS_TIME | DURATION | NOT_STARTED | 0.0 | 0.0 | 0.0 |  | COM COMM 300-03 CONTINUOUS WOOD | cal_24h |  |  |  |
| A11400 | Nitrogen Purge & Leak Test | TT.11 | TASK_DEPENDENT | CAL-03 | 72.0 | 3.0 | 72.0 | FIXED_DURATION_AND_UNITS_TIME | DURATION | NOT_STARTED | 0.0 | 0.0 | 0.0 |  | COM COMM CONTINUOUS WOOD |  |  | CONFINED SPACE |  |
| A11500 | Performance / Functional Testing | TT.11 | TASK_DEPENDENT | CAL-03 | 96.0 | 4.0 | 96.0 | FIXED_DURATION_AND_UNITS_TIME | DURATION | NOT_STARTED | 0.0 | 0.0 | 0.0 |  | COM COMM CONTINUOUS WOOD |  |  |  |  |
| A11600 | Operator Training | TT.11 | TASK_DEPENDENT | CAL-01 | 80.0 | 10.0 | 80.0 | FIXED_DURATION_AND_UNITS_TIME | DURATION | NOT_STARTED | 0.0 | 0.0 | 0.0 |  | COM COMM WOOD |  |  |  |  |
| A12000 | Mechanical Completion (MC) | TT.11 | FINISH_MILESTONE | CAL-01 | 0.0 | 0.0 | 0.0 | FIXED_DURATION_AND_UNITS_TIME | DURATION | NOT_STARTED | 0.0 | 0.0 | 0.0 | FINISH_ON_OR_BEFORE 2026-11-06T17:00:00 | PM COMM WOOD | con_fnlt, float_negative, type_finish_ms, net_merge_point | THE NEGATIVE FLOAT DRIVER. Contractual FNLT of 06-Nov-2026 that the CPM forward pass cannot meet. Expect TF < 0 here and back through the driving path. Verify: (a) the magnitude of the negative float, (b) that it propagates ONLY along the driving chain, (c) that LOEs do NOT inherit it. |  |  |
| A9500 | Client-Supplied Spares - Receipt & Storage | TT.12 | TASK_DEPENDENT | CAL-01 | 40.0 | 5.0 | 40.0 | FIXED_DURATION_AND_UNITS_TIME | DURATION | NOT_STARTED | 0.0 | 0.0 | 0.0 |  | PM HANDOVER WOOD | net_open_start | OPEN START, NOT STARTED. With no predecessor its early start must collapse to the DATA DATE (not the project start). With 'Make open-ended activities critical' = TRUE it must become critical. |  |  |
| A12100 | Punchlist Category A Clearance | TT.12 | TASK_DEPENDENT | CAL-02 | 80.0 | 8.0 | 80.0 | FIXED_DURATION_AND_UNITS_TIME | DURATION | NOT_STARTED | 0.0 | 0.0 | 0.0 |  | PM HANDOVER WOOD |  |  |  |  |
| A12200 | Handover Dossiers & As-Builts | TT.12 | TASK_DEPENDENT | CAL-01 | 120.0 | 15.0 | 120.0 | FIXED_DURATION_AND_UNITS_TIME | DURATION | NOT_STARTED | 0.0 | 0.0 | 0.0 |  | PM HANDOVER WOOD |  |  |  |  |
| A12300 | Care, Custody & Control Transfer | TT.12 | TASK_DEPENDENT | CAL-01 | 40.0 | 5.0 | 40.0 | FIXED_DURATION_AND_UNITS_TIME | DURATION | NOT_STARTED | 0.0 | 0.0 | 0.0 |  | PM HANDOVER WOOD |  |  |  |  |
| A12500 | Ready For Start-Up (RFSU) | TT.12 | FINISH_MILESTONE | CAL-01 | 0.0 | 0.0 | 0.0 | FIXED_DURATION_AND_UNITS_TIME | DURATION | NOT_STARTED | 0.0 | 0.0 | 0.0 | FINISH_ON 2026-12-04T17:00:00 | PM HANDOVER WOOD | con_finish_on, net_external_late_finish, float_multiple_paths_target | FINISH ON pins the milestone in BOTH passes (unlike FNLT/FNET which pin only one). Also carries an EXTERNAL LATE FINISH from the downstream Start-Up project. This is the target activity for the Multiple Float Paths test. |  | 2026-12-11T17:00:00 |
| A12600 | Demobilise Plant & Equipment | TT.12 | TASK_DEPENDENT | CAL-02 | 60.0 | 6.0 | 60.0 | FIXED_DURATION_AND_UNITS_TIME | DURATION | NOT_STARTED | 0.0 | 0.0 | 0.0 |  | PM HANDOVER WOOD |  |  |  |  |
| A12700 | Marine Demob - Barge & Heavy Lift Removal | TT.12 | TASK_DEPENDENT | CAL-06 | 80.0 | 10.0 | 80.0 | FIXED_DURATION_AND_UNITS_TIME | DURATION | NOT_STARTED | 0.0 | 0.0 | 0.0 |  | MEC HANDOVER SUB-MECH | cal_long_nonwork_block, net_open_finish, float_negative | On CAL-06, which has a 4-MONTH non-work block (01-Nov to 28-Feb). Its early start lands INSIDE that block, so the engine must push the whole activity to 01-Mar-2027 - after the project's Must Finish By. Expect large negative float. It has no successor, so the damage must NOT cascade. Guard your calendar walker with an iteration cap: a naive 'next working hour' loop will crawl through ~2,900 non-work hours here. | True |  |
| A13000 | Project Complete | TT.12 | FINISH_MILESTONE | CAL-01 | 0.0 | 0.0 | 0.0 | FIXED_DURATION_AND_UNITS_TIME | DURATION | NOT_STARTED | 0.0 | 0.0 | 0.0 |  | PM HANDOVER WOOD | type_finish_ms, project_finish |  |  |  |

Links (id, predecessor, successor, type, lag_h, lag_calendar, test_tags, note):
- R0001 A1000 A1010 SS 0.0 loe_span_start
- R0002 A1010 A13000 FF 0.0 loe_span_end
- R0003 A4100 A1020 SS 0.0 loe_span_start
- R0004 A1020 A12000 FF 0.0 loe_span_end
- R0005 A3000 A1030 SS 0.0 loe_span_start
- R0006 A1030 A12500 FF 0.0 loe_span_end
- R0007 A1000 A1040 SS 0.0 loe_span_start
- R0008 A1040 A13000 FF 0.0 loe_span_end
- R0009 A7100 A3100 SS 0.0 loe_span_start
- R0010 A3100 A9200 FF 0.0 loe_span_end
- R0011 A1000 A2000 FS 0.0 con_start_on Logic says A2000 could start on 05-Jan; the START_ON constraint pins it to 19-Jan. Tests that START_ON overrides a permissive predecessor in the forward pass AND is not pulled earlier by the backward pass.
- R0012 A2100 A2110 FS 80.0 rel_fs, lag_positive
- R0013 A2110 A2120 FS 160.0 rel_fs, lag_positive, net_external_vs_internal A2120 has BOTH internal logic (this edge) and an external_early_start of 2026-04-13. The later of the two must drive. Toggle 'ignore relationships to/from other projects' and confirm which one wins.
- R0014 A2110 A2300 FS 40.0 rel_fs, lag_positive
- R0015 A2110 A2310 FS 320.0 rel_fs, lag_positive
- R0016 A2120 A2320 FS 240.0 rel_fs, lag_positive
- R0017 A2320 A2330 FS 160.0 rel_fs, lag_positive
- R0018 A1000 A3000 FS 0.0 rel_fs, lag_zero
- R0019 A3000 A3010 FS 0.0
- R0020 A2000 A3010 FS 0.0 net_multiple_predecessors
- R0021 A3000 A3020 FS 0.0
- R0022 A3010 A3030 FS 0.0
- R0023 A3020 A3040 FS 0.0
- R0024 A3030 A5500 FS 0.0 cal_night_crosses_midnight Night shift bolt-up needs temporary lighting. Gives the completed A3030 a successor.
- R0025 A3040 A6100 FS 0.0 prog_stopped_zero_remaining A3040 is STOPPED (RD=0, no actual finish). Its remaining early finish = the DATA DATE, and that must propagate into A6100. If your engine leaves A3040's finish null, this successor breaks.
- R0026 A8700 A3800 SF 0.0 rel_sf, lag_sf_zero START-TO-FINISH, zero lag. Temp power must not FINISH until permanent power STARTS. Forward pass: EF(succ) >= ES(pred) + 0. Then ES(succ) = EF(succ) - RD(succ).
- R0027 A3800 A3900 FS 0.0
- R0028 A3010 A4100 FS 0.0
- R0029 A2100 A4100 FS 0.0 net_multiple_predecessors
- R0030 A4100 A4110 SS 60.0 rel_ss, lag_positive
- R0031 A4110 A4200 FS 0.0
- R0032 A4200 A4210 SS 40.0 rel_ss, lag_positive
- R0033 A4200 A4220 FS 0.0 rel_fs, prog_out_of_sequence The out-of-sequence edge. A4220 has an actual start while A4200 is only 40%% complete.
- R0034 A4200 A4230 SS 48.0 rel_ss, lag_positive
- R0035 A4230 A4300 FS 0.0
- R0036 A4220 A4300 FS 0.0 retained_logic_vs_progress_override THE DISCRIMINATOR EDGE. A4220 is out of sequence. Under RETAINED LOGIC its remaining work waits for A4200 (remaining finish ~16-Mar), so A4300 starts ~19-Mar. Under PROGRESS OVERRIDE A4220's remaining work runs from the data date, so A4300 falls back to its SNET of 16-Mar. If A4300 lands on the same date in both scenarios, the option is not implemented.
- R0037 A4300 A4310 FS 0.0
- R0038 A4310 A4320 FS 0.0
- R0039 A4320 A4330 FS 0.0
- R0040 A4330 A4340 FS 0.0
- R0041 A4340 A4350 FS 0.0
- R0042 A4350 A4360 FS -20.0 rel_fs, lag_negative, lag_fs_negative, pathological NEGATIVE FS LAG (a 'lead'). Backfill may start 20h (2 days on CAL-02) before formwork stripping finishes. Sign convention: ES(succ) >= EF(pred) + lag, with lag = -20h.
- R0043 A4210 A4400 FS 0.0
- R0044 A4300 A4400 FF 20.0 rel_ff, lag_positive, lag_ff_positive
- R0045 A4400 A4410 FS 0.0
- R0046 A4410 A4420 FS 0.0
- R0047 A4420 A4430 FS 0.0
- R0048 A4430 A4440 FS 168.0 24H rel_fs, lag_positive, lag_calendar_24h, lag_calendar_setting_sensitive EXPLICIT 24-HOUR LAG CALENDAR. 168h = exactly 7 elapsed days regardless of the CAL-02 working pattern. This edge OVERRIDES the project-level lag calendar setting. If your model has no per-relationship lag calendar you cannot represent concrete cure correctly.
- R0049 A4440 A4450 FS 0.0
- R0050 A4110 A4500 FS 0.0
- R0051 A4300 A4500 SS 40.0 rel_ss, lag_positive, net_multiple_predecessors
- R0052 A4500 A4510 SS 0.0 rel_ss, lag_zero, lag_ss_zero
- R0053 A4510 A4520 FF 0.0 rel_ff, lag_zero, lag_ff_zero, net_dangling_start The ONLY link into A4520 is an FF, so nothing drives its start.
- R0054 A4450 A4600 FS 0.0
- R0055 A4360 A4600 FS 0.0
- R0056 A4110 A4600 FS 0.0 net_redundant_logic REDUNDANT: A4110 already reaches A4600 transitively via A4200 -> A4210 -> A4400 -> ... -> A4450. Never driving; a redundancy report should list it.
- R0057 A4360 A4999 FS 0.0
- R0058 A4450 A4999 FS 0.0
- R0059 A4520 A4999 FS 0.0
- R0060 A4600 A4999 FS 0.0
- R0061 A4350 A5100 FS 0.0
- R0062 A2300 A5100 FS 80.0 rel_fs, lag_exceeds_pred_duration Lag (80h) is DOUBLE the predecessor's original duration (40h). Legal, but a good test of lag arithmetic that is anchored on the predecessor's FINISH rather than its start.
- R0063 A5100 A5110 SS 80.0 rel_ss, lag_positive, lag_ss_positive
- R0064 A5100 A5120 FF 0.0 rel_ff, lag_zero, lag_ff_zero
- R0065 A5100 A5130 FS 0.0
- R0066 A5100 A5500 SS 40.0 rel_ss, lag_positive, cal_night_crosses_midnight Predecessor on CAL-02 (07:00-17:30), successor on CAL-04 (20:00-06:00). The lag must be resolved on ONE of them, and the successor's start must then be snapped to the next NIGHT-SHIFT working instant.
- R0067 A4440 A5200 FS 0.0
- R0068 A2310 A5200 FS 0.0
- R0069 A5200 A5210 SS 80.0 rel_ss, lag_positive
- R0070 A5200 A5220 FF 0.0 rel_ff, lag_zero
- R0071 A5200 A5230 FS 0.0
- R0072 A4350 A5300 FS 0.0
- R0073 A2300 A5300 FS 0.0
- R0074 A5110 A5400 FS 0.0
- R0075 A5120 A5400 FS 0.0
- R0076 A5210 A5400 FS 0.0
- R0077 A5220 A5400 FS 0.0
- R0078 A5500 A5400 FS 0.0
- R0079 A2110 A6000 FS 0.0
- R0080 A6000 A6100 FS 400.0 rel_fs, lag_positive, lag_long VERY LONG LAG (400h = 50 working days on CAL-01). Not driving - the crane resource calendar is - which is itself the test.
- R0081 A2210 A6100 FS 0.0
- R0082 A5300 A6100 FS 0.0
- R0083 A6100 A6200 SS 0.0 rel_ss, lag_zero, res_overallocation Forces A6100 and A6200 to overlap while both demand the single 600t crane. Unlevelled = 200%%.
- R0084 A2200 A6200 FS 0.0
- R0085 A6100 A6300 SS 80.0 rel_ss, lag_positive, net_dangling_activity
- R0086 A2220 A6400 FS 0.0
- R0087 A5300 A6400 FS 0.0
- R0088 A6200 A6500 FS 0.0
- R0089 A6400 A6500 FS 0.0
- R0090 A6500 A6600 FS 0.0
- R0091 A5100 A7100 SS 50.0 rel_ss, lag_positive, lag_ss_positive
- R0092 A2320 A7100 FS 0.0
- R0093 A7100 A7110 SS 0.0 rel_ss, lag_zero
- R0094 A7100 A7120 FF 40.0 rel_ff, lag_positive, lag_ff_positive
- R0095 A7100 A7130 FS 0.0
- R0096 A7110 A7130 FS 0.0
- R0097 A5200 A7200 SS 50.0 rel_ss, lag_positive
- R0098 A2330 A7200 FS 0.0
- R0099 A7200 A7210 SS 0.0 rel_ss, lag_zero
- R0100 A7200 A7220 FF 40.0 rel_ff, lag_positive
- R0101 A7200 A7230 FS 0.0
- R0102 A7210 A7230 FS 0.0
- R0103 A6500 A7300 FS 0.0
- R0104 A6300 A7300 SS 0.0 rel_ss, lag_zero, net_dangling_activity
- R0105 A7100 A7400 FF 0.0 rel_ff, lag_zero
- R0106 A7200 A7400 FF 0.0 rel_ff, lag_zero
- R0107 A7300 A7400 FF 0.0 rel_ff, lag_zero
- R0108 A7400 A7550 FS 0.0 net_zero_duration_task
- R0109 A7550 A7600 FS 0.0 net_zero_duration_task
- R0110 A7120 A7600 FS 0.0
- R0111 A7220 A7600 FS 0.0
- R0112 A7130 A7600 FS 0.0
- R0113 A7230 A7600 FS 0.0
- R0114 A7600 A7700 FS 0.0
- R0115 A7600 A7730 FS 0.0 res_overallocation, levelling_test
- R0116 A7700 A7710 FS 0.0
- R0117 A7710 A7720 FS 0.0
- R0118 A7720 A7740 FS 0.0
- R0119 A7730 A7740 FS 0.0
- R0120 A7740 A7500 FS 0.0
- R0121 A5130 A8000 FS 0.0
- R0122 A5230 A8000 FS 0.0
- R0123 A8000 A8010 SS -40.0 rel_ss, lag_negative, lag_ss_negative, pathological NEGATIVE SS LAG. ES(succ) >= ES(pred) - 40h, so the successor may start FOUR DAYS BEFORE its predecessor. Almost certainly a modelling error in the real world; here it is a deliberate sign-convention test.
- R0124 A8000 A8020 SS 80.0 rel_ss, lag_positive
- R0125 A8000 A8100 FS 0.0
- R0126 A7100 A8200 FF 40.0 rel_ff, lag_positive
- R0127 A7200 A8200 FF 40.0 rel_ff, lag_positive
- R0128 A2230 A8300 FS 40.0 rel_fs, lag_positive, lag_calendar_setting_sensitive Predecessor A2230 is on CAL-03 (24h). Successor A8300 is on CAL-01 (5-day) but is RESOURCE DEPENDENT on a MON-THU calendar. The 40h lag resolves to a different date under each 'calendar for relationship lag' setting: PREDECESSOR (24h) ~= +1.7 elapsed days; SUCCESSOR ~= +5 working days. This single edge is the best proof that the setting is actually wired up.
- R0129 A8100 A8300 FS 0.0
- R0130 A8010 A8400 FS 0.0
- R0131 A8020 A8400 FS 0.0
- R0132 A8300 A8400 FS 0.0
- R0133 A8400 A8500 FS 0.0
- R0134 A8200 A8500 FS 0.0
- R0135 A8500 A8600 FS 0.0
- R0136 A8500 A8700 FS 0.0
- R0137 A5220 A9000 FF -30.0 rel_ff, lag_negative, lag_ff_negative, pathological NEGATIVE FF LAG. EF(succ) >= EF(pred) - 30h. The successor may finish 3 days BEFORE the predecessor.
- R0138 A5120 A9000 FS 0.0
- R0139 A7740 A9100 FS 0.0
- R0140 A8500 A9100 SS 80.0 rel_ss, lag_positive
- R0141 A9100 A9200 SS 80.0 rel_ss, lag_positive
- R0142 A9000 A9200 FS 0.0
- R0143 A9200 A9300 SS 40.0 rel_ss, lag_positive
- R0144 A9200 A9400 FS 0.0
- R0145 A9300 A9400 FS 0.0
- R0146 A7400 A10000 FS 0.0
- R0147 A10000 A10100 FS 0.0 con_mandatory_start, breaks_logic This edge can be VIOLATED by A10100's Mandatory Start. That is the point.
- R0148 A10100 A10200 FS 0.0
- R0149 A10200 A10300 FS 0.0
- R0150 A10300 A10400 FS 0.0
- R0151 A10400 A10500 FS 0.0 con_mandatory_finish, breaks_logic
- R0152 A11100 A10450 SF 16.0 rel_sf, lag_positive, lag_sf_positive SF + POSITIVE LAG. EF(A10450) >= ES(A11100) + 16h.
- R0153 A11200 A10460 SF -8.0 rel_sf, lag_negative, lag_sf_negative, pathological SF + NEGATIVE LAG. EF(A10460) >= ES(A11200) - 8h. Pure sign-convention torture.
- R0154 A10500 A10600 FS 0.0
- R0155 A8600 A11000 FS 0.0
- R0156 A9300 A11000 FS 0.0
- R0157 A10500 A11000 FS 0.0
- R0158 A11000 A11050 FS 0.0
- R0159 A7740 A11050 FS 0.0
- R0160 A11050 A11100 FS 0.0
- R0161 A11100 A11200 FS 24.0 rel_fs, lag_positive, cal_24h Both ends on CAL-03. A 24h lag here is exactly one elapsed day - verify it is not being converted through an 8h/day assumption somewhere.
- R0162 A11000 A11300 FS 0.0
- R0163 A8700 A11300 FS 0.0
- R0164 A11100 A11400 FS 0.0
- R0165 A11200 A11400 FS 0.0
- R0166 A11400 A11500 FS 0.0
- R0167 A11300 A11500 FS 0.0
- R0168 A11300 A11600 FS 0.0
- R0169 A11500 A12000 FS 0.0 net_merge_point
- R0170 A9400 A12000 FS 0.0 net_merge_point
- R0171 A6600 A12000 FS 0.0 net_merge_point
- R0172 A7500 A12000 FS 0.0 net_merge_point
- R0173 A10600 A12000 FS 0.0 net_merge_point
- R0174 A10450 A12000 FS 0.0 net_merge_point
- R0175 A10460 A12000 FS 0.0 net_merge_point
- R0176 A4999 A12000 FS 0.0 net_merge_point
- R0177 A5400 A12000 FS 0.0 net_merge_point
- R0178 A12000 A12100 FS 0.0
- R0179 A12000 A12200 FS 0.0
- R0180 A9500 A12200 FS 0.0 net_open_start
- R0181 A12100 A12300 FS 0.0
- R0182 A12200 A12300 FS 0.0
- R0183 A11600 A12300 FS 0.0
- R0184 A12300 A12500 FS 0.0
- R0185 A12300 A12600 FS 0.0
- R0186 A12600 A12700 FS 0.0 cal_long_nonwork_block
- R0187 A12500 A13000 FS 0.0
- R0188 A12600 A13000 FS 0.0
