# Unit 300 Amine Regeneration Package - Construction & Commissioning

Schedule from Primavera P6, 2026-01-05 to 2026-08-14, data date 2026-03-02, A marks actual dates.

## Calendars

- 6-Day Construction (10h, Mon-Sat): Mon-Sat 07:00-12:00, 12:30-17:30; Sun off.
- 5-Day Day Shift (8h): Mon-Fri 08:00-12:00, 13:00-17:00; Sat-Sun off.
- 7-Day 24-Hour Continuous: Mon-Sun 00:00-24:00.
- Heavy Lift / Weather Window (8h, non-work 01-Nov to 28-Feb): Mon-Fri 08:00-16:00; Sat-Sun off.
- Turnaround Window (12h, 01-Oct to 30-Oct-2026 only): Mon-Sun 08:00-17:00.
- Night Shift (Mon-Fri 20:00-06:00): Mon 20:00-24:00; Tue-Fri 00:00-06:00, 20:00-24:00; Sat 00:00-06:00; Sun off.

## Resources

| Resource | Group |
| --- | --- |
| Supervisor | labor |
| QA/QC Inspector | labor |
| Civil Operative | labor |
| Scaffolder | labor |
| 30t Excavator | equipment |
| Ready-mix Concrete | material |
| Steel Erector | labor |
| 200t Crawler Crane | equipment |
| Structural Steel | material |
| 600t Crawler Crane | equipment |
| Pipefitter | labor |
| Coded Welder | labor |
| MEWP / Cherry Picker | equipment |
| Pipe Spools | material |
| Hydrotest Pump Unit | equipment |
| E&I Technician | labor |
| Cable | material |
| HV Specialist | labor |
| Insulator | labor |
| Painter / Blaster | labor |
| Welding Set | equipment |
| Commissioning Technician | labor |

## Schedule

| ID | WBS | Activity | Type | Duration | Start | Finish | Predecessors | Complete | Remaining | Constraint | Calendar | Resources |
| --- | --- | --- | --- | --- | --- | --- | --- | --- | --- | --- | --- | --- |
|  | TT | **Unit 300 Amine Regeneration Package** |  |  | 2026-01-05 | 2026-08-14 |  |  |  |  |  |  |
|  | TT.1 | **Project Management & Controls** |  |  | 2026-01-05 | 2026-01-05 |  |  |  |  |  |  |
| A1000 |  | Notice to Proceed | milestone | 0d | 2026-01-05 A | 2026-01-05 A |  | 100% |  | start on or after 2026-01-05 | 5-Day Day Shift (8h) |  |
| A1010 |  | Construction Management & Supervision | level of effort | 0d | 2026-01-05 A |  | A1000 SS |  | 0d |  | 5-Day Day Shift (8h) | Supervisor [3600 h] |
| A1030 |  | HSE Management & Permit Control | level of effort | 0d | 2026-01-05 A |  | A3000 SS |  | 0d |  |  | Supervisor [1600 h] |
| A1040 |  | Project Controls & Reporting | level of effort | 0d | 2026-01-05 A |  | A1000 SS |  | 0d |  | 5-Day Day Shift (8h) |  |
| A1020 |  | QA/QC Surveillance | level of effort | 0d | 2026-01-26 A |  | A4100 SS |  | 0d |  | 5-Day Day Shift (8h) | QA/QC Inspector [2000 h] |
|  | TT.10 | **Turnaround Tie-ins** |  |  |  |  |  |  |  |  |  |  |
| A10000 |  | Tie-in Preparation & Isolation Planning |  | 10d |  |  | A7400 |  |  |  | 5-Day Day Shift (8h) |  |
| A10100 |  | TA Window Opens | milestone | 0d |  |  | A10000 |  |  | mandatory start 2026-10-05 | 7-Day 24-Hour Continuous |  |
| A10200 |  | Break Containment & Isolate Existing Lines |  | 3d |  |  | A10100 |  |  |  | Turnaround Window (12h, 01-Oct to 30-Oct-2026 only) |  |
| A10300 |  | Hot Tap / Tie-in Welds (12 no.) |  | 12d |  |  | A10200 |  |  |  | Turnaround Window (12h, 01-Oct to 30-Oct-2026 only) | Coded Welder [768 h]; Welding Set [768 h] |
| A10400 |  | Tie-in NDT & PWHT |  | 4.5d |  |  | A10300 |  |  |  | Turnaround Window (12h, 01-Oct to 30-Oct-2026 only) |  |
| A10450 |  | Legacy Control System - Parallel Run |  | 15d |  |  | A11100 SF+2d |  |  |  | 7-Day 24-Hour Continuous |  |
| A10460 |  | Legacy Instrument Air - Maintain Supply |  | 25d |  |  | A11200 SF-1d |  |  |  | 7-Day 24-Hour Continuous |  |
| A10500 |  | TA Window Closes | milestone | 0d |  |  | A10400 |  |  | mandatory finish 2026-10-16 | 7-Day 24-Hour Continuous |  |
| A10600 |  | Reinstate Insulation & Painting (Tie-ins) |  | 7.5d |  |  | A10500 |  |  |  |  |  |
|  | TT.11 | **Pre-Commissioning & Commissioning** |  |  |  |  |  |  |  |  |  |  |
| A11000 |  | Commissioning Start | milestone | 0d |  |  | A8600, A9300, A10500 |  |  |  | 5-Day Day Shift (8h) |  |
| A11050 |  | System Walkdowns & Punch Clear (300-01) |  | 10d |  |  | A11000, A7740 |  |  |  |  |  |
| A11100 |  | Commissioning - System 300-01 |  | 20d |  |  | A11050 |  |  |  | 7-Day 24-Hour Continuous | Commissioning Technician [640 h] |
| A11200 |  | Commissioning - System 300-02 |  | 17.5d |  |  | A11100 FS+3d |  |  |  | 7-Day 24-Hour Continuous | Commissioning Technician [560 h] |
| A11300 |  | Commissioning - System 300-03 (Utilities) |  | 15d |  |  | A11000, A8700 |  |  |  | 7-Day 24-Hour Continuous |  |
| A11400 |  | Nitrogen Purge & Leak Test |  | 9d |  |  | A11100, A11200 |  |  |  | 7-Day 24-Hour Continuous |  |
| A11500 |  | Performance / Functional Testing |  | 12d |  |  | A11400, A11300 |  |  |  | 7-Day 24-Hour Continuous |  |
| A11600 |  | Operator Training |  | 10d |  |  | A11300 |  |  |  | 5-Day Day Shift (8h) |  |
| A12000 |  | Mechanical Completion (MC) | milestone | 0d |  |  | A1020 FF, A11500, A9400, A6600, A7500, A10600, A10450, A10460, A4999, A5400 |  |  | finish on or before 2026-11-06 | 5-Day Day Shift (8h) |  |

| ID | WBS | Activity | Type | Duration | Start | Finish | Predecessors | Complete | Remaining | Constraint | Calendar | Resources |
| --- | --- | --- | --- | --- | --- | --- | --- | --- | --- | --- | --- | --- |
|  | TT.12 | **Handover & Demobilisation** |  |  |  |  |  |  |  |  |  |  |
| A12100 |  | Punchlist Category A Clearance |  | 10d |  |  | A12000 |  |  |  |  |  |
| A12200 |  | Handover Dossiers & As-Builts |  | 15d |  |  | A12000, A9500 |  |  |  | 5-Day Day Shift (8h) |  |
| A12300 |  | Care, Custody & Control Transfer |  | 5d |  |  | A12100, A12200, A11600 |  |  |  | 5-Day Day Shift (8h) |  |
| A12500 |  | Ready For Start-Up (RFSU) | milestone | 0d |  |  | A1030 FF, A12300 |  |  | finish on 2026-12-04 | 5-Day Day Shift (8h) |  |
| A12600 |  | Demobilise Plant & Equipment |  | 7.5d |  |  | A12300 |  |  |  |  |  |
| A12700 |  | Marine Demob - Barge & Heavy Lift Removal |  | 10d |  |  | A12600 |  |  |  | Heavy Lift / Weather Window (8h, non-work 01-Nov to 28-Feb) |  |
| A13000 |  | Project Complete | milestone | 0d |  |  | A1010 FF, A1040 FF, A12500, A12600 |  |  |  | 5-Day Day Shift (8h) |  |
| A9500 |  | Client-Supplied Spares - Receipt & Storage |  | 5d |  |  |  |  |  |  | 5-Day Day Shift (8h) |  |
|  | TT.2 | **Engineering & Procurement** |  |  | 2026-01-16 | 2026-02-13 |  |  |  |  |  |  |
| A2100 |  | IFC Civil Drawings Received | milestone | 0d | 2026-01-16 A | 2026-01-16 A |  | 100% |  |  | 5-Day Day Shift (8h) |  |
| A2000 |  | Site Access Granted (Contract Milestone) | milestone | 0d | 2026-01-19 A | 2026-01-19 A | A1000 | 100% |  | start on 2026-01-19 | 5-Day Day Shift (8h) |  |
| A2110 |  | IFC Structural Drawings Received | milestone | 0d | 2026-01-30 A | 2026-01-30 A | A2100 FS+10d | 100% |  |  | 5-Day Day Shift (8h) |  |
| A2300 |  | Structural Steel Batch 1 Delivered |  | 5d | 2026-02-09 A | 2026-02-13 A | A2110 FS+5d | 100% |  |  | 5-Day Day Shift (8h) |  |
| A2120 |  | IFC Piping Isometrics Rev 0 | milestone | 0d |  |  | A2110 FS+20d |  |  |  | 5-Day Day Shift (8h) |  |
| A2200 |  | Absorber Column T-301 Delivered to Site | milestone | 0d |  |  |  |  |  |  | 7-Day 24-Hour Continuous |  |
| A2210 |  | Module PAU-301 Delivered to Site | milestone | 0d |  |  |  |  |  |  | 7-Day 24-Hour Continuous |  |
| A2220 |  | Amine Pumps P-301A/B Delivered | milestone | 0d |  |  |  |  |  |  | 5-Day Day Shift (8h) |  |
| A2230 |  | HV Switchgear Delivered | milestone | 0d |  |  |  |  |  |  | 7-Day 24-Hour Continuous |  |
| A2310 |  | Structural Steel Batch 2 Delivered |  | 5d |  |  | A2110 FS+40d |  |  |  | 5-Day Day Shift (8h) |  |
| A2320 |  | Pipe Spools Batch 1 Delivered |  | 10d |  |  | A2120 FS+30d |  |  |  | 5-Day Day Shift (8h) |  |
| A2330 |  | Pipe Spools Batch 2 Delivered |  | 10d |  |  | A2320 FS+20d |  |  |  | 5-Day Day Shift (8h) |  |
|  | TT.3 | **Site Establishment & Enabling** |  |  | 2026-01-05 | 2026-02-11 |  |  |  |  |  |  |
| A3000 |  | Mobilise to Site |  | 5d | 2026-01-05 A | 2026-01-09 A | A1000 | 100% |  |  | 5-Day Day Shift (8h) |  |
| A3020 |  | Site Hoarding & Security |  | 7.5d | 2026-01-12 A | 2026-01-19 A | A3000 | 100% |  |  |  |  |
| A3010 |  | Site Establishment & Welfare |  | 12.5d | 2026-01-19 A | 2026-01-31 A | A3000, A2000 | 100% |  |  |  | Civil Operative [600 h] |
| A3040 |  | Access Roads & Laydown (Temporary) |  | 15d | 2026-01-26 A |  | A3020 | 100% | 0d |  |  |  |
| A3030 |  | Temporary Power Installation |  | 10d | 2026-02-02 A | 2026-02-11 A | A3010 | 100% |  |  |  |  |
| A3100 |  | Scaffolding - Erect / Maintain / Dismantle | level of effort | 0d |  |  | A7100 SS |  |  |  |  | Scaffolder [4800 h] |
| A3800 |  | Temporary Power Supply - Final Period of Operation |  | 30d |  |  | A8700 SF |  |  |  | 7-Day 24-Hour Continuous |  |
| A3900 |  | Temporary Facilities Removal & Site Clean |  | 12.5d |  |  | A3800 |  |  | finish on or after 2026-11-30 |  |  |

| ID | WBS | Activity | Type | Duration | Start | Finish | Predecessors | Complete | Remaining | Constraint | Calendar | Resources |
| --- | --- | --- | --- | --- | --- | --- | --- | --- | --- | --- | --- | --- |
|  | TT.4 | **CWA-100 Civils & Underground** |  |  | 2026-01-26 | 2026-02-13 |  |  |  |  |  |  |
| A4100 |  | Site Clearance & Earthworks |  | 18.75d | 2026-01-26 A | 2026-02-13 A | A3010, A2100 | 100% |  |  |  | Civil Operative [1800 h]; 30t Excavator [300 h] |
| A4110 |  | Ground Improvement / Piling Mat |  | 10d | 2026-02-02 A | 2026-02-13 A | A4100 SS+7.5d | 100% |  |  |  |  |
| A4999 |  | Civils Complete | milestone | 0d |  |  | A4360, A4450, A4520, A4600 |  |  |  | 5-Day Day Shift (8h) |  |
|  | TT.4.1 | **Piling** |  |  | 2026-02-16 |  |  |  |  |  |  |  |
| A4200 |  | Piling - Zone A |  | 25d | 2026-02-16 A |  | A4110 | 35% | 15d |  |  | Civil Operative [2000 h]; 30t Excavator [200 h] |
| A4230 |  | Pile Cropping |  | 15d | 2026-02-17 A |  | A4200 SS+6d | 50% | 7.5d |  |  | Civil Operative [720 h] |
| A4210 |  | Piling - Zone B |  | 22.5d | 2026-02-23 A |  | A4200 SS+5d | 17% | 18.75d |  |  | Civil Operative [1800 h] |
| A4220 |  | Pile Integrity Testing |  | 5d | 2026-02-25 A |  | A4200 | 40% | 3d |  | 5-Day Day Shift (8h) | QA/QC Inspector [80 h] |
|  | TT.4.2 | **Foundations** |  |  |  |  |  |  |  |  |  |  |
| A4300 |  | Excavate Foundations - Zone A |  | 12.5d |  |  | A4230, A4220 |  |  | start on or after 2026-03-16 |  |  |
| A4310 |  | Blinding Concrete - Zone A |  | 3.75d |  |  | A4300 |  |  |  |  |  |
| A4320 |  | Rebar & Formwork - Zone A |  | 15d |  |  | A4310 |  |  |  |  |  |
| A4330 |  | Pour Foundations - Zone A |  | 5d |  |  | A4320 |  |  |  |  | Ready-mix Concrete [850] |
| A4340 |  | Concrete Cure - Zone A |  | 21d |  |  | A4330 |  |  |  | 7-Day 24-Hour Continuous |  |
| A4350 |  | Strip Formwork - Zone A |  | 5d |  |  | A4340 |  |  |  |  |  |
| A4360 |  | Backfill - Zone A |  | 7.5d |  |  | A4350 FS-2.5d |  |  |  |  |  |
| A4400 |  | Excavate Foundations - Zone B |  | 12.5d |  |  | A4210, A4300 FF+2.5d |  |  |  |  |  |
| A4410 |  | Blinding Concrete - Zone B |  | 3.75d |  |  | A4400 |  |  |  |  |  |
| A4420 |  | Rebar & Formwork - Zone B |  | 15d |  |  | A4410 |  |  |  |  |  |
| A4430 |  | Pour Foundations - Zone B |  | 5d |  |  | A4420 |  |  |  |  | Ready-mix Concrete [780] |
| A4440 |  | Strip Formwork - Zone B |  | 5d |  |  | A4430 FS+21d |  |  |  |  |  |
| A4450 |  | Backfill - Zone B |  | 7.5d |  |  | A4440 |  |  |  |  |  |
|  | TT.4.3 | **Underground Services** |  |  |  |  |  |  |  |  |  |  |
| A4500 |  | Underground Piping & Drainage |  | 20d |  |  | A4110, A4300 SS+5d |  |  |  |  |  |
| A4510 |  | Underground Electrical Ducts |  | 15d |  |  | A4500 SS |  |  |  |  |  |
| A4520 |  | Cathodic Protection Installation |  | 7.5d |  |  | A4510 FF |  |  |  |  |  |
| A4600 |  | Permanent Hardstanding & Roads |  | 17.5d |  |  | A4450, A4360, A4110 |  |  |  |  |  |

| ID | WBS | Activity | Type | Duration | Finish | Predecessors | Constraint | Calendar | Resources |
| --- | --- | --- | --- | --- | --- | --- | --- | --- | --- |
|  | TT.5 | **CWA-200 Structural Steel & Pipe Rack** |  |  |  |  |  |  |  |
| A5100 |  | Erect Pipe Rack Steel - Zone A |  | 25d |  | A4350, A2300 FS+10d |  |  | Steel Erector [1200 h]; 200t Crawler Crane [200 h]; Structural Steel [120] |
| A5110 |  | Grout Baseplates - Zone A |  | 5d |  | A5100 SS+10d |  |  |  |
| A5120 |  | Torque & Plumb Steel - Zone A |  | 7.5d |  | A5100 FF |  |  |  |
| A5130 |  | Handrails & Grating - Zone A |  | 12.5d |  | A5100 |  |  |  |
| A5200 |  | Erect Pipe Rack Steel - Zone B |  | 27.5d |  | A4440, A2310 | start on or after 2026-05-04; finish on or before 2026-06-26 |  | Steel Erector [1320 h]; 200t Crawler Crane [220 h]; Structural Steel [135] |
| A5210 |  | Grout Baseplates - Zone B |  | 5d |  | A5200 SS+10d |  |  |  |
| A5220 |  | Torque & Plumb Steel - Zone B |  | 7.5d |  | A5200 FF |  |  |  |
| A5230 |  | Handrails & Grating - Zone B |  | 12.5d |  | A5200 |  |  |  |
| A5300 |  | Erect Equipment Support Steel |  | 15d |  | A4350, A2300 |  |  |  |
| A5400 |  | Steel Inspection & Punchlist |  | 5d |  | A5110, A5120, A5210, A5220, A5500 |  | 5-Day Day Shift (8h) |  |
| A5500 |  | Night Shift Steel Bolt-Up (SIMOPS) |  | 7.5d |  | A3030, A5100 SS+5d |  | Night Shift (Mon-Fri 20:00-06:00) | Steel Erector [240 h] |
|  | TT.6 | **CWA-300 Mechanical & Equipment** |  |  | 2026-08-14 |  |  |  |  |
| A6000 |  | Heavy Lift Study & Ground Bearing Check |  | 5d |  | A2110 |  | 5-Day Day Shift (8h) |  |
| A6100 |  | Set Module PAU-301 (Heavy Lift) | resource dependent | 7.5d |  | A3040, A6000 FS+50d, A2210, A5300 |  | Heavy Lift / Weather Window (8h, non-work 01-Nov to 28-Feb) | 600t Crawler Crane [60 h]; Steel Erector [480 h] |
| A6200 |  | Set Absorber Column T-301 |  | 10d | 2026-08-14 | A6100 SS, A2200 |  | Heavy Lift / Weather Window (8h, non-work 01-Nov to 28-Feb) | 600t Crawler Crane [80 h]; Steel Erector [480 h] |
| A6300 |  | Set Amine Pumps P-301A/B |  | 7.5d |  | A6100 SS+10d |  |  |  |
| A6400 |  | Set Heat Exchangers E-301/302 |  | 10d |  | A2220, A5300 |  |  |  |
| A6500 |  | Mechanical Alignment & Grouting |  | 12.5d |  | A6200, A6400 |  |  |  |
| A6600 |  | Equipment Punchlist |  | 5d |  | A6500 |  | 5-Day Day Shift (8h) |  |
|  | TT.7 | **CWA-400 Piping** |  |  |  |  |  |  |  |
|  | TT.7.1 | **Above-Ground Piping** |  |  |  |  |  |  |  |
| A7100 |  | Pipe Erection - Rack Zone A |  | 37.5d |  | A5100 SS+6.25d, A2320 |  |  | Pipefitter [2400 h]; Coded Welder [1104 h]; MEWP / Cherry Picker [600 h]; Pipe Spools [220] |
| A7110 |  | Pipe Supports - Zone A |  | 15d |  | A7100 SS |  |  |  |
| A7120 |  | Small Bore & Tubing - Zone A |  | 17.5d |  | A7100 FF+5d |  |  |  |
| A7130 |  | Valve Installation - Zone A |  | 10d |  | A7100, A7110 |  |  |  |
| A7200 |  | Pipe Erection - Rack Zone B |  | 40d |  | A5200 SS+6.25d, A2330 |  |  | Pipefitter [2560 h]; Coded Welder [1280 h]; Pipe Spools [240] |
| A7210 |  | Pipe Supports - Zone B |  | 15d |  | A7200 SS |  |  |  |
| A7220 |  | Small Bore & Tubing - Zone B |  | 17.5d |  | A7200 FF+5d |  |  |  |
| A7230 |  | Valve Installation - Zone B |  | 10d |  | A7200, A7210 |  |  |  |
| A7300 |  | Equipment Piping & In-Battery Tie-ins |  | 25d |  | A6500, A6300 SS |  |  |  |
| A7400 |  | NDT & Weld Inspection |  | 10d |  | A7100 FF, A7200 FF, A7300 FF |  | 5-Day Day Shift (8h) |  |
| A7500 |  | Punchlist & Reinstatement (Piping) |  | 7.5d |  | A7740 |  |  |  |
| A7550 |  | Piping Turnover Package Sign-off |  | 0d |  | A7400 |  | 5-Day Day Shift (8h) |  |

| ID | WBS | Activity | Type | Duration | Predecessors | Constraint | Calendar | Resources |
| --- | --- | --- | --- | --- | --- | --- | --- | --- |
|  | TT.7.2 | **Hydrotest** |  |  |  |  |  |  |
| A7600 |  | Hydrotest Preparation |  | 10d | A7550, A7120, A7220, A7130, A7230 | start on or before 2026-09-30 |  |  |
| A7700 |  | Hydrotest - System 300-01 |  | 7.5d | A7600 |  |  | Hydrotest Pump Unit [60 h]; Pipefitter [240 h] |
| A7710 |  | Hydrotest Hold / Stabilisation |  | 3d | A7700 |  | 7-Day 24-Hour Continuous |  |
| A7720 |  | Depressurise, Drain & Dry |  | 5d | A7710 |  |  |  |
| A7730 |  | Hydrotest - System 300-02 |  | 7.5d | A7600 |  |  | Hydrotest Pump Unit [60 h]; Pipefitter [240 h] |
| A7740 |  | Reinstatement Post-Hydrotest |  | 10d | A7720, A7730 |  |  |  |
|  | TT.8 | **CWA-500 Electrical & Instrumentation** |  |  |  |  |  |  |
| A8000 |  | Cable Tray & Containment |  | 20d | A5130, A5230 |  |  |  |
| A8010 |  | Cable Pulling - Power |  | 25d | A8000 SS-5d |  |  | E&I Technician [1600 h]; Cable [12000] |
| A8020 |  | Cable Pulling - Control & Instrument |  | 22.5d | A8000 SS+10d |  |  |  |
| A8100 |  | Local Panels & Junction Boxes |  | 12.5d | A8000 |  |  |  |
| A8200 |  | Instrument Installation |  | 20d | A7100 FF+5d, A7200 FF+5d |  |  |  |
| A8300 |  | HV Switchgear Installation & Termination | resource dependent | 15d | A2230 FS+5d, A8100 |  | 5-Day Day Shift (8h) | HV Specialist [240 h] |
| A8400 |  | Cable Termination & Glanding |  | 25d | A8010, A8020, A8300 |  |  |  |
| A8500 |  | Loop Checks & Continuity Testing |  | 15d | A8400, A8200 |  | 5-Day Day Shift (8h) |  |
| A8600 |  | Fibre & Network Commissioning |  | 7.5d | A8500 |  | 5-Day Day Shift (8h) |  |
| A8700 |  | Energise Permanent Power (HV) |  | 5d | A8500 |  | 5-Day Day Shift (8h) |  |
|  | TT.9 | **CWA-600 Insulation, Fireproofing & Painting** |  |  |  |  |  |  |
| A9000 |  | Fireproofing - Structural Steel |  | 17.5d | A5220 FF-3.75d, A5120 |  |  |  |
| A9100 |  | Insulation - Piping & Equipment |  | 30d | A7740, A8500 SS+10d |  |  | Insulator [1920 h] |
| A9200 |  | Painting - Touch-up & Final Coat |  | 20d | A3100 FF, A9100 SS+10d, A9000 |  |  | Painter / Blaster [960 h] |
| A9300 |  | Labelling, Tagging & Line Marking |  | 7.5d | A9200 SS+5d |  | 5-Day Day Shift (8h) |  |
| A9400 |  | Final Site Clean & Snagging Prep |  | 10d | A9200, A9300 | as late as possible |  |  |
